# MDSS

Schedule from MS Project, 2009-02-02 to 2009-06-30, costs in USD, A marks actual dates.
Misty Heights

## Calendars

- Standard: Mon-Fri 08:00-12:00, 13:00-17:00; Sat-Sun off.

## Resources

| Resource | Group | Rate |
| --- | --- | --- |
| Nathan | Terra Frame | 115 |
| Thomas (Oz) | Terra Frame | 115 |
| Justin | Terra Frame | 115 |
| Darrell | Terra Frame | 115 |
| MRC | Supplier |  |
| External TF1 | Terra Frame |  |
| Marlize | Project |  |
| Mike | Project |  |
| External TF2 | Terra Frame |  |
| TBD | Terra Frame | 115 |
| Saul | Project |  |
| Sanika | Project |  |
| Lars |  |  |

## Schedule

| ID | WBS | Task | Type | Duration | Start | Finish | Predecessors | Complete | Remaining | Baseline start | Baseline finish | Baseline duration | Total slack | Free slack | Constraint | Resources | Work | Actual work | Cost | Baseline cost | Actual cost | Text1 | Text2 | Text4 | Text3 |
| --- | --- | --- | --- | --- | --- | --- | --- | --- | --- | --- | --- | --- | --- | --- | --- | --- | --- | --- | --- | --- | --- | --- | --- | --- | --- |
| 1 | 1 | **MDSS Implementation** |  | 83.76d? | 2009-02-02 A | 2009-05-28 |  | 3% | 81.42d? | 2009-02-02 | 2009-05-28 | 83.25d? | 23.24d |  |  |  | 4486.62h | 117.6h | 265,144.04 | 257,416.04 | 13,524.09 |  |  |  |  |
| 2 | 1.1 | **Create Prototype (Entomology)** |  | 34.12d? | 2009-02-02 A | 2009-03-20 |  | 13% | 29.57d? | 2009-02-02 | 2009-03-12 | 28.23d? | 71.88d | 0d |  |  | 904h | 117.6h | 81,880.04 | 74,152.04 | 13,524.09 |  |  |  |  |
| 3 | 1.1.1 | **System requirements** |  | 30d? | 2009-02-02 A | 2009-03-13 |  | 16% | 25.13d? | 2009-02-02 | 2009-03-09 | 26d? | 76d |  |  |  | 532h | 81.6h | 39,100.04 | 31,372.04 | 9,384.09 |  |  |  |  |
| 4 | 1.1.1.1 | Dev: Ontology Schema MIRO |  | 10d | 2009-02-02 A | 2009-02-13 |  | 60% | 4d | 2009-02-02 | 2009-02-09 | 6d | 23.24d | 0d |  | Thomas (Oz) [85%] | 68h | 40.8h | 7,820 | 4,692 | 4,692 | SYS08 | 5 days |  |  |
| 5 | 1.1.1.2 | Dev: Geography MOJO attributes (PostGIS phase 1) |  | 11.76d? | 2009-02-02 A | 2009-02-17 |  | 51% | 5.76d? | 2009-02-02 | 2009-02-09 | 5.88d? | 42.29d | 0d |  | Nathan [85%] | 80h | 40.8h | 9,200.04 | 4,600.04 | 4,692.09 | SYS03-01 | 7 days |  |  |
| 6 | 1.1.1.3 | Dev: Geography functions integrated into the query API |  | 5.88d? | 2009-02-17 | 2009-02-25 | 5 |  |  | 2009-02-09 | 2009-02-17 | 5.88d? | 42.29d | 0d |  | Nathan [85%] | 40h |  | 4,600 | 4,600 |  | SYS03-02 | 7 days |  |  |
| 7 | 1.1.1.4 | Dev: Finalyse the MOJO schema for geo entities |  | 18.82h | 2009-02-25 | 2009-02-27 | 6 |  |  | 2009-02-17 | 2009-02-20 | 18.82h | 42.29d | 0d |  | Nathan [85%] | 16h |  | 1,840 | 1,840 |  |  |  |  |  |
| 8 | 1.1.1.5 | Dev: GIS visual tool integration |  | 7.06d? | 2009-02-16 | 2009-02-25 | 4 |  |  | 2009-02-10 | 2009-02-19 | 7.06d? | 23.24d | 0d |  | Thomas (Oz) [85%] | 48h |  | 5,520 | 5,520 |  | SYS10 | 6 days |  |  |
| 9 | 1.1.1.6 | Dev: Geoserver integration |  | 7.06d? | 2009-02-25 | 2009-03-06 | 8 |  |  | 2009-02-19 | 2009-03-02 | 7.06d? | 23.24d | 0d |  | Thomas (Oz) [85%] | 48h |  | 5,520 | 5,520 |  | SYS11 | 6 days |  |  |
| 10 | 1.1.1.7 | Dev: DHTML tree widget selection and integration |  | 5d? | 2009-02-11 | 2009-02-17 |  |  |  | 2009-02-11 | 2009-02-17 | 5d? | 50.29d | 0d | start no earlier than 2009-02-11 | External TF1 | 40h |  |  |  |  | SYS02 | 5 days | 10 |  |
| 11 | 1.1.1.8 | Dev: import/export an XLS file with a pre-populated headers |  | 6d? | 2009-02-11 | 2009-02-18 |  |  |  | 2009-02-11 | 2009-02-18 | 6d? | 91d | 0d | start no earlier than 2009-02-11 | External TF2 | 48h |  |  |  |  | SYS04-01 | 2 days | 11 |  |
| 12 | 1.1.1.9 | Dev: Import XLS file. Map column headers to fields of a class |  | 2d? | 2009-02-19 | 2009-02-20 | 11 |  |  | 2009-02-19 | 2009-02-20 | 2d? | 91d |  |  | External TF2 | 16h |  |  |  |  | SYS04-02 | 2 days | 12 |  |
| 13 | 1.1.1.10 | Dev: Represent query criteria as in a user interface |  | 5d? | 2009-02-18 | 2009-02-24 | 10 |  |  | 2009-02-18 | 2009-02-24 | 5d? | 78d | 0d |  | External TF1 | 40h |  |  |  |  | SYS06-01 | 5 days | 13 |  |
| 14 | 1.1.1.11 | Dev: Represent query criteria in back-end |  | 5d? | 2009-02-25 | 2009-03-03 | 13 |  |  | 2009-02-25 | 2009-03-03 | 5d? | 78d | 0d |  | External TF1 | 40h |  |  |  |  | SYS06-02 | 5 days | 14 |  |
| 15 | 1.1.1.12 | Dev: Save query criteria to the database |  | 1d? | 2009-03-04 | 2009-03-04 | 14 |  |  | 2009-03-04 | 2009-03-04 | 1d? | 78d | 0d |  | External TF1 | 8h |  |  |  |  | SYS06-03 | 1 day | 15 |  |
| 16 | 1.1.1.13 | Dev: Generic GIS visualisation and output requirements |  | 47.06h | 2009-03-06 | 2009-03-13 | 9 |  |  | 2009-03-02 | 2009-03-09 | 47.06h | 23.24d | 0d |  | Thomas (Oz) [85%] | 40h |  | 4,600 | 4,600 |  | MDSS143 |  | 16 |  |
| 17 | 1.1.2 | **Prototype Use cases** |  | 29.12d? | 2009-02-09 A | 2009-03-20 |  | 9% | 26.39d? | 2009-02-09 | 2009-03-12 | 23.23d? | 42.29d |  |  |  | 372h | 36h | 42,780 | 42,780 | 4,140 |  |  | 17 |  |
| 18 | 1.1.2.1 | **Search for a geo entity** |  | 14.12d? | 2009-02-27 | 2009-03-20 |  |  |  | 2009-02-20 | 2009-03-12 | 14.12d? | 42.29d |  |  |  | 96h |  | 11,040 | 11,040 |  | MDSS101 |  | 18 |  |
| 19 | 1.1.2.1.1 | Dev: Search for a geo entity - ontology tree |  | 4.71d? | 2009-02-27 | 2009-03-06 | 7, 10 |  |  | 2009-02-20 | 2009-02-26 | 4.71d? | 42.29d | 0d |  | Nathan [85%] | 32h |  | 3,680 | 3,680 |  | MDSS111 | 4 days | 19 |  |
| 20 | 1.1.2.1.2 | Dev: Search for a geo entity - filtered |  | 2.35d? | 2009-03-06 | 2009-03-11 | 19 |  |  | 2009-02-26 | 2009-03-03 | 2.35d? | 42.29d | 0d |  | Nathan [85%] | 16h |  | 1,840 | 1,840 |  | MDSS101 |  | 20 |  |
| 21 | 1.1.2.1.3 | Dev: Search for a geo entity - Hierarchy table |  | 2.35d? | 2009-03-11 | 2009-03-13 | 20 |  |  | 2009-03-03 | 2009-03-05 | 2.35d? | 42.29d | 0d |  | Nathan [85%] | 16h |  | 1,840 | 1,840 |  | MDSS101 |  | 21 |  |
| 22 | 1.1.2.1.4 | Dev: Search for a geo entity - combo boxes |  | 3.53d? | 2009-03-13 | 2009-03-18 | 21 |  |  | 2009-03-05 | 2009-03-11 | 3.53d? | 42.29d | 0d |  | Nathan [85%] | 24h |  | 2,760 | 2,760 |  | MDSS101 |  | 22 |  |
| 23 | 1.1.2.1.5 | Dev: Search for a geo entity - finalise |  | 1.18d? | 2009-03-18 | 2009-03-20 | 22 |  |  | 2009-03-11 | 2009-03-12 | 1.18d? | 42.29d | 0d |  | Nathan [85%] | 8h |  | 920 | 920 |  | MDSS101 |  | 23 |  |
| 24 | 1.1.2.2 | Investigate widget libraries |  | 16h | 2009-02-09 A | 2009-02-10 A |  | 100% |  | 2009-02-09 | 2009-02-10 | 16h |  |  | start no earlier than 2009-02-07 | Darrell | 16h | 16h | 1,840 | 1,840 | 1,840 |  |  | 24 |  |
| 25 | 1.1.2.3 | Dev: login to MDSS |  | 4h | 2009-02-11 | 2009-02-11 | 24 |  |  | 2009-02-11 | 2009-02-11 | 4h | 37d | 0d |  | Darrell | 4h |  | 460 | 460 |  | MDSS107 |  | 25 |  |
| 26 | 1.1.2.4 | Dev: BE - Submit a mosquito collection |  | 20h | 2009-02-09 A | 2009-02-11 |  | 50% | 10h | 2009-02-09 | 2009-02-11 | 20h | 25.62d | 0d | start no earlier than 2009-02-07 | Justin [80%] | 16h | 8h | 1,840 | 1,840 | 920 | MDSS024 |  | 26 |  |
| 27 | 1.1.2.5 | Dev: GUI - Submit a mosquito collection |  | 20h | 2009-02-11 | 2009-02-13 | 25, 26 |  |  | 2009-02-11 | 2009-02-13 | 20h | 37d | 0d |  | Darrell [80%] | 16h |  | 1,840 | 1,840 |  | MDSS024 |  | 27 |  |
| 28 | 1.1.2.6 | Dev: BE - Submit collection points |  | 1.25d? | 2009-02-11 A | 2009-02-12 | 26 | 50% | 0.62d? | 2009-02-11 | 2009-02-12 | 1.25d? | 25d | 0d |  | Justin [80%] | 8h | 4h | 920 | 920 | 460 | MDSS016 |  | 28 |  |
| 29 | 1.1.2.7 | Dev: GUI - Submit collection points |  | 10h | 2009-02-16 | 2009-02-17 | 27, 28 |  |  | 2009-02-16 | 2009-02-17 | 10h | 37d | 0d |  | Darrell [80%] | 8h |  | 920 | 920 |  | MDSS016 |  | 29 |  |
| 30 | 1.1.2.8 | Dev: BE - Resistance Mechanisms |  | 2.5d? | 2009-02-12 A | 2009-02-17 | 28 | 50% | 1.25d? | 2009-02-12 | 2009-02-17 | 2.5d? | 23.75d | 0d |  | Justin [80%] | 16h | 8h | 1,840 | 1,840 | 920 | MDSS012 |  | 30 |  |
| 31 | 1.1.2.9 | Dev: GUI - Resistance Mechanisms |  | 40h | 2009-02-17 | 2009-02-24 | 29, 30 |  |  | 2009-02-17 | 2009-02-24 | 40h | 37d | 0d |  | Darrell [80%] | 32h |  | 3,680 | 3,680 |  | MDSS012 |  | 31 |  |
| 32 | 1.1.2.10 | Dev: BE - Resistance cut-off values |  | 1.25d? | 2009-02-17 | 2009-02-18 | 30 |  |  | 2009-02-17 | 2009-02-18 | 1.25d? | 23.75d | 0d |  | Justin [80%] | 8h |  | 920 | 920 |  | MDSS009 |  | 32 |  |
| 33 | 1.1.2.11 | Dev: GUI - Resistance cut-off values |  | 10h | 2009-02-24 | 2009-02-25 | 32, 31 |  |  | 2009-02-24 | 2009-02-25 | 10h | 37d | 0d |  | Darrell [80%] | 8h |  | 920 | 920 |  | MDSS009 |  | 33 |  |
| 34 | 1.1.2.12 | Dev: BE - Adult discriminating dose assay |  | 2.5d? | 2009-02-18 | 2009-02-20 | 32 |  |  | 2009-02-18 | 2009-02-20 | 2.5d? | 23.75d | 0d |  | Justin [80%] | 16h |  | 1,840 | 1,840 |  | MDSS004 |  | 34 |  |
| 35 | 1.1.2.13 | Dev: GUI - Adult discriminating dose assay |  | 20h | 2009-02-25 | 2009-02-27 | 33, 34 |  |  | 2009-02-25 | 2009-02-27 | 20h | 37d | 0d |  | Darrell [80%] | 16h |  | 1,840 | 1,840 |  | MDSS004 |  | 35 |  |
| 36 | 1.1.2.14 | Dev: BE - configure import interfaces |  | 10h | 2009-02-23 | 2009-02-24 | 34 |  |  | 2009-02-23 | 2009-02-24 | 10h | 23.75d | 0d |  | Justin [80%] | 8h |  | 920 | 920 |  | MDSS100 |  | 36 |  |
| 37 | 1.1.2.15 | Dev: GUI - configure import interfaces |  | 10h | 2009-03-02 | 2009-03-03 | 35, 36 |  |  | 2009-03-02 | 2009-03-03 | 10h | 37d | 0d |  | Darrell [80%] | 8h |  | 920 | 920 |  | MDSS100 |  | 37 |  |
| 38 | 1.1.2.16 | Dev: BE - Entomology dynamic query |  | 2.5d? | 2009-02-24 | 2009-02-26 | 36 |  |  | 2009-02-24 | 2009-02-26 | 2.5d? | 23.75d | 0d |  | Justin [80%] | 16h |  | 1,840 | 1,840 |  | MDSS145 |  | 38 |  |
| 39 | 1.1.2.17 | Dev: GUI - Entomology dynamic query |  | 20h | 2009-03-03 | 2009-03-05 | 37, 38 |  |  | 2009-03-03 | 2009-03-05 | 20h | 37d | 0d |  | Darrell [80%] | 16h |  | 1,840 | 1,840 |  | MDSS145 |  | 39 |  |
| 40 | 1.1.2.18 | Dev: Enquiry integration with selected reporting tool |  | 4d? | 2009-02-26 | 2009-03-04 | 38 |  |  | 2009-02-26 | 2009-03-04 | 4d? | 23.75d | 0d |  | Justin | 32h |  | 3,680 | 3,680 |  | SYS09 |  | 40 |  |
| 41 | 1.1.2.19 | Dev: change visibility of fields on GUI |  | 32h | 2009-03-05 | 2009-03-11 | 39, 40 |  |  | 2009-03-05 | 2009-03-11 | 32h | 37d | 0d |  | Darrell | 32h |  | 3,680 | 3,680 |  | MDSS117 |  | 41 |  |
| 42 | 1.2 | Delivery of prototype | milestone | 1d? | 2009-03-20 | 2009-03-23 | 2 |  |  | 2009-03-12 | 2009-03-13 | 1d? | 71.88d |  |  |  |  |  |  |  |  |  |  | 42 |  |
| 43 | 1.3 | Required delivery of prototype | milestone | 8h | 2009-03-09 | 2009-03-09 |  |  |  | 2009-03-02 | 2009-03-02 | 8h | 81d |  | start no earlier than 2009-03-09 |  |  |  |  |  |  |  |  | 43 |  |
| 44 | 1.4 | Dev:BE - Biochemical cut-off values |  | 1d? | 2009-03-04 | 2009-03-05 | 40 |  |  | 2009-03-04 | 2009-03-05 | 1d? | 23.75d | 0d |  | Justin [80%] | 6.4h |  | 736 | 736 |  | MDSS014 |  | 44 |  |
| 45 | 1.5 | Dev: GUI - Biochemical cut-off values |  | 10h | 2009-03-11 | 2009-03-12 | 44, 41 |  |  | 2009-03-11 | 2009-03-12 | 10h | 37d | 0d |  | Darrell [80%] | 8h |  | 920 | 920 |  | MDSS014 |  | 45 |  |
| 46 | 1.6 | Dev: BE - Adult knock down assay |  | 1.5d? | 2009-03-05 | 2009-03-09 | 44 |  |  | 2009-03-05 | 2009-03-09 | 1.5d? | 23.75d | 0d |  | Justin [80%] | 9.6h |  | 1,104 | 1,104 |  | MDSS006 |  | 46 |  |
| 47 | 1.7 | Dev: GUI - Adult knock down assay |  | 15h | 2009-03-13 | 2009-03-16 | 46, 45 |  |  | 2009-03-13 | 2009-03-16 | 15h | 37d | 0d |  | Darrell [80%] | 12h |  | 1,380 | 1,380 |  | MDSS006 |  | 47 |  |
| 48 | 1.8 | Dev: BE - Larvae discriminating dose assay |  | 1.5d? | 2009-03-09 | 2009-03-10 | 46 |  |  | 2009-03-09 | 2009-03-10 | 1.5d? | 23.75d | 0d |  | Justin [80%] | 9.6h |  | 1,104 | 1,104 |  | MDSS008 |  | 48 | 10 |
| 49 | 1.9 | Dev: GUI - Larvae discriminating dose assay |  | 15h | 2009-03-16 | 2009-03-18 | 48, 47 |  |  | 2009-03-16 | 2009-03-18 | 15h | 37d | 0d |  | Darrell [80%] | 12h |  | 1,380 | 1,380 |  | MDSS008 |  | 49 | 10 |
| 50 | 1.10 | Dev: BE - Efficacy assay |  | 2.5d? | 2009-03-10 | 2009-03-13 | 48 |  |  | 2009-03-10 | 2009-03-13 | 2.5d? | 23.75d | 0d |  | Justin [80%] | 16h |  | 1,840 | 1,840 |  | MDSS025 |  | 50 |  |
| 51 | 1.11 | Dev: GUI - Efficacy assay |  | 20h | 2009-03-18 | 2009-03-23 | 49 |  |  | 2009-03-18 | 2009-03-23 | 20h | 37d | 0d |  | Darrell [80%] | 16h |  | 1,840 | 1,840 |  | MDSS025 |  | 51 |  |

| ID | WBS | Task | Type | Duration | Start | Finish | Predecessors | Baseline start | Baseline finish | Baseline duration | Total slack | Free slack | Constraint | Resources | Work | Text4 |
| --- | --- | --- | --- | --- | --- | --- | --- | --- | --- | --- | --- | --- | --- | --- | --- | --- |
| 52 | 1.12 | **Aquire Geo Data** |  | 11d? | 2009-02-10 | 2009-02-24 |  | 2009-02-10 | 2009-02-24 | 11d? | 89d | 0d |  |  | 1552h | 52 |
| 53 | 1 | **Mozambique** |  | 11d? | 2009-02-10 | 2009-02-24 |  | 2009-02-10 | 2009-02-24 | 11d? | 89d |  |  |  | 424h | 53 |
| 54 | 1.1 | **Priority 1: Province Boundaries** |  | 10d | 2009-02-10 | 2009-02-23 |  | 2009-02-10 | 2009-02-23 | 10d | 90d |  |  |  | 80h | 54 |
| 55 | 1.1.1 | Data set acquired |  | 7d | 2009-02-10 | 2009-02-18 |  | 2009-02-10 | 2009-02-18 | 7d | 90d | 0d | start no earlier than 2009-02-10 | MRC | 56h | 55 |
| 56 | 1.1.2 | Data set ready for delivery | milestone | 3d | 2009-02-19 | 2009-02-23 | 55 | 2009-02-19 | 2009-02-23 | 3d | 90d |  | start no earlier than 2009-02-12 | MRC | 24h | 56 |
| 57 | 1.2 | **Priority 1: District Boundaries** |  | 4d? | 2009-02-10 | 2009-02-13 |  | 2009-02-10 | 2009-02-13 | 4d? | 96d |  |  |  | 32h | 57 |
| 58 | 1.2.1 | Data set acquired |  | 3d | 2009-02-10 | 2009-02-12 |  | 2009-02-10 | 2009-02-12 | 3d | 96d | 0d | start no earlier than 2009-02-10 | MRC | 24h | 58 |
| 59 | 1.2.2 | Data set ready for delivery | milestone | 1d? | 2009-02-13 | 2009-02-13 | 58 | 2009-02-13 | 2009-02-13 | 1d? | 96d |  | start no earlier than 2009-02-06 | MRC | 8h | 59 |
| 60 | 1.3 | **Priority 1: Administrative Post Boundaries** |  | 4d? | 2009-02-10 | 2009-02-13 |  | 2009-02-10 | 2009-02-13 | 4d? | 96d |  |  |  | 32h | 60 |
| 61 | 1.3.1 | Data set acquired |  | 3d | 2009-02-10 | 2009-02-12 |  | 2009-02-10 | 2009-02-12 | 3d | 96d | 0d | start no earlier than 2009-02-10 | MRC | 24h | 61 |
| 62 | 1.3.2 | Data set ready for delivery | milestone | 1d? | 2009-02-13 | 2009-02-13 | 61 | 2009-02-13 | 2009-02-13 | 1d? | 96d |  | start no earlier than 2009-02-06 | MRC | 8h | 62 |
| 63 | 1.4 | **Priority 1: Locality Boundaries** |  | 4d? | 2009-02-10 | 2009-02-13 |  | 2009-02-10 | 2009-02-13 | 4d? | 96d |  |  |  | 32h | 63 |
| 64 | 1.4.1 | Data set acquired |  | 1d? | 2009-02-10 | 2009-02-10 |  | 2009-02-10 | 2009-02-10 | 1d? | 96d | 0d | start no earlier than 2009-02-10 | MRC | 8h | 64 |
| 65 | 1.4.2 | Data set ready for delivery | milestone | 3d | 2009-02-11 | 2009-02-13 | 64 | 2009-02-11 | 2009-02-13 | 3d | 96d |  | start no earlier than 2009-02-06 | MRC | 24h | 65 |
| 66 | 1.5 | **Priority 1: Village Points** |  | 10d? | 2009-02-10 | 2009-02-23 |  | 2009-02-10 | 2009-02-23 | 10d? | 90d |  |  |  | 80h | 66 |
| 67 | 1.5.1 | Data set acquired |  | 5d | 2009-02-10 | 2009-02-16 |  | 2009-02-10 | 2009-02-16 | 5d | 90d | 0d | start no earlier than 2009-02-10 | MRC | 40h | 67 |
| 68 | 1.5.2 | Data set ready for delivery | milestone | 5d? | 2009-02-17 | 2009-02-23 | 67 | 2009-02-17 | 2009-02-23 | 5d? | 90d |  | finish no earlier than 2009-02-13 | MRC | 40h | 68 |
| 69 | 1.6 | **Priority 1: Health Facility Points** |  | 11d? | 2009-02-10 | 2009-02-24 |  | 2009-02-10 | 2009-02-24 | 11d? | 89d |  |  |  | 88h | 69 |
| 70 | 1.6.1 | Data set acquired |  | 10d | 2009-02-10 | 2009-02-23 |  | 2009-02-10 | 2009-02-23 | 10d | 89d | 0d | start no earlier than 2009-02-10 | MRC | 80h | 70 |
| 71 | 1.6.2 | Data set ready for delivery | milestone | 1d? | 2009-02-24 | 2009-02-24 | 70 | 2009-02-24 | 2009-02-24 | 1d? | 89d |  | start no earlier than 2009-02-16 | MRC | 8h | 71 |
| 72 | 1.7 | **Priority 1: Sentinel Site Points** |  | 5d? | 2009-02-10 | 2009-02-16 |  | 2009-02-10 | 2009-02-16 | 5d? | 95d |  |  |  | 40h | 72 |
| 73 | 1.7.1 | Data set acquired |  | 1d? | 2009-02-10 | 2009-02-10 |  | 2009-02-10 | 2009-02-10 | 1d? | 95d | 0d | start no earlier than 2009-02-10 | MRC | 8h | 73 |
| 74 | 1.7.2 | Data set ready for delivery | milestone | 4d? | 2009-02-11 | 2009-02-16 | 73 | 2009-02-11 | 2009-02-16 | 4d? | 95d |  | finish no earlier than 2009-02-06 | MRC | 32h | 74 |
| 75 | 1.8 | **Priority 1: Window Trap Points** |  | 5d? | 2009-02-10 | 2009-02-16 |  | 2009-02-10 | 2009-02-16 | 5d? | 95d |  |  |  | 40h | 75 |
| 76 | 1.8.1 | Data set acquired |  | 1d? | 2009-02-10 | 2009-02-10 |  | 2009-02-10 | 2009-02-10 | 1d? | 95d | 0d | start no earlier than 2009-02-10 | MRC | 8h | 76 |
| 77 | 1.8.2 | Data set ready for delivery | milestone | 4d? | 2009-02-11 | 2009-02-16 | 76 | 2009-02-11 | 2009-02-16 | 4d? | 95d |  | start no earlier than 2009-02-03 | MRC | 32h | 77 |

| ID | WBS | Task | Type | Duration | Start | Finish | Predecessors | Baseline start | Baseline finish | Baseline duration | Total slack | Free slack | Constraint | Resources | Work | Text4 |
| --- | --- | --- | --- | --- | --- | --- | --- | --- | --- | --- | --- | --- | --- | --- | --- | --- |
| 78 | 2 | **Malawi** |  | 10d? | 2009-02-10 | 2009-02-23 |  | 2009-02-10 | 2009-02-23 | 10d? | 90d |  |  |  | 512h | 78 |
| 79 | 2.1 | **Priority 1: Province / Region Boundaries** |  | 10d? | 2009-02-10 | 2009-02-23 |  | 2009-02-10 | 2009-02-23 | 10d? | 90d |  |  |  | 80h | 79 |
| 80 | 2.1.1 | Data set acquired |  | 5d | 2009-02-10 | 2009-02-16 |  | 2009-02-10 | 2009-02-16 | 5d | 90d | 0d | start no earlier than 2009-02-10 | MRC | 40h | 80 |
| 81 | 2.1.2 | Data set ready for delivery | milestone | 5d? | 2009-02-17 | 2009-02-23 | 80 | 2009-02-17 | 2009-02-23 | 5d? | 90d |  | finish no earlier than 2009-02-13 | MRC | 40h | 81 |
| 82 | 2.2 | **Priority 1: District Boundaries** |  | 10d? | 2009-02-10 | 2009-02-23 |  | 2009-02-10 | 2009-02-23 | 10d? | 90d |  |  |  | 80h | 82 |
| 83 | 2.2.1 | Data set acquired |  | 5d | 2009-02-10 | 2009-02-16 |  | 2009-02-10 | 2009-02-16 | 5d | 90d | 0d | start no earlier than 2009-02-10 | MRC | 40h | 83 |
| 84 | 2.2.2 | Data set ready for delivery | milestone | 5d? | 2009-02-17 | 2009-02-23 | 83 | 2009-02-17 | 2009-02-23 | 5d? | 90d |  | finish no earlier than 2009-02-13 | MRC | 40h | 84 |
| 85 | 2.3 | **Priority 1: Traditional Authority Boundaries** |  | 10d? | 2009-02-10 | 2009-02-23 |  | 2009-02-10 | 2009-02-23 | 10d? | 90d |  |  |  | 80h | 85 |
| 86 | 2.3.1 | Data set acquired |  | 5d | 2009-02-10 | 2009-02-16 |  | 2009-02-10 | 2009-02-16 | 5d | 90d | 0d | start no earlier than 2009-02-10 | MRC | 40h | 86 |
| 87 | 2.3.2 | Data set ready for delivery | milestone | 5d? | 2009-02-17 | 2009-02-23 | 86 | 2009-02-17 | 2009-02-23 | 5d? | 90d |  | finish no earlier than 2009-02-13 | MRC | 40h | 87 |
| 88 | 2.4 | **Priority 1: Village Points** |  | 10d? | 2009-02-10 | 2009-02-23 |  | 2009-02-10 | 2009-02-23 | 10d? | 90d |  |  |  | 80h | 88 |
| 89 | 2.4.1 | Data set acquired |  | 5d | 2009-02-10 | 2009-02-16 |  | 2009-02-10 | 2009-02-16 | 5d | 90d | 0d | start no earlier than 2009-02-10 | MRC | 40h | 89 |
| 90 | 2.4.2 | Data set ready for delivery | milestone | 5d? | 2009-02-17 | 2009-02-23 | 89 | 2009-02-17 | 2009-02-23 | 5d? | 90d |  | finish no earlier than 2009-02-13 | MRC | 40h | 90 |
| 91 | 2.5 | **Priority 1: Health Facility Points** |  | 10d? | 2009-02-10 | 2009-02-23 |  | 2009-02-10 | 2009-02-23 | 10d? | 90d |  |  |  | 80h | 91 |
| 92 | 2.5.1 | Data set acquired |  | 5d | 2009-02-10 | 2009-02-16 |  | 2009-02-10 | 2009-02-16 | 5d | 90d | 0d | start no earlier than 2009-02-10 | MRC | 40h | 92 |
| 93 | 2.5.2 | Data set ready for delivery | milestone | 5d? | 2009-02-17 | 2009-02-23 | 92 | 2009-02-17 | 2009-02-23 | 5d? | 90d |  | start no earlier than 2009-02-09 | MRC | 40h | 93 |
| 94 | 2.6 | **Priority 1: Sentinel Site Points** |  | 8d? | 2009-02-10 | 2009-02-19 |  | 2009-02-10 | 2009-02-19 | 8d? | 92d |  |  |  | 64h | 94 |
| 95 | 2.6.1 | Data set acquired |  | 4d | 2009-02-10 | 2009-02-13 |  | 2009-02-10 | 2009-02-13 | 4d | 92d | 0d | start no earlier than 2009-02-10 | MRC | 32h | 95 |
| 96 | 2.6.2 | Data set ready for delivery | milestone | 4d? | 2009-02-16 | 2009-02-19 | 95 | 2009-02-16 | 2009-02-19 | 4d? | 92d |  | start no earlier than 2009-02-10 | MRC | 32h | 96 |
| 97 | 2.7 | **Priority 1: Window Trap Points** |  | 6d? | 2009-02-10 | 2009-02-17 |  | 2009-02-10 | 2009-02-17 | 6d? | 94d |  |  |  | 48h | 97 |
| 98 | 2.7.1 | Data set acquired |  | 5d | 2009-02-10 | 2009-02-16 |  | 2009-02-10 | 2009-02-16 | 5d | 94d | 0d | start no earlier than 2009-02-10 | MRC | 40h | 98 |
| 99 | 2.7.2 | Data set ready for delivery | milestone | 1d? | 2009-02-17 | 2009-02-17 | 98 | 2009-02-17 | 2009-02-17 | 1d? | 94d |  | finish no earlier than 2009-02-13 | MRC | 8h | 99 |
| 100 | 3 | **Zambia** |  | 10d? | 2009-02-10 | 2009-02-23 |  | 2009-02-10 | 2009-02-23 | 10d? | 90d |  |  |  | 616h | 100 |
| 101 | 3.1 | **Priority 1: Province Boundaries** |  | 10d? | 2009-02-10 | 2009-02-23 |  | 2009-02-10 | 2009-02-23 | 10d? | 90d |  |  |  | 80h | 101 |
| 102 | 3.1.1 | Data set acquired |  | 5d | 2009-02-10 | 2009-02-16 |  | 2009-02-10 | 2009-02-16 | 5d | 90d | 0d | start no earlier than 2009-02-10 | MRC | 40h | 102 |
| 103 | 3.1.2 | Data set ready for delivery | milestone | 5d? | 2009-02-17 | 2009-02-23 | 102 | 2009-02-17 | 2009-02-23 | 5d? | 90d |  | finish no earlier than 2009-02-13 | MRC | 40h | 103 |

| ID | WBS | Task | Type | Duration | Start | Finish | Predecessors | Baseline start | Baseline finish | Baseline duration | Total slack | Free slack | Constraint | Resources | Work | Text4 |
| --- | --- | --- | --- | --- | --- | --- | --- | --- | --- | --- | --- | --- | --- | --- | --- | --- |
| 104 | 3.2 | **Priority 1: District Boundaries** |  | 10d? | 2009-02-10 | 2009-02-23 |  | 2009-02-10 | 2009-02-23 | 10d? | 90d |  |  |  | 80h | 104 |
| 105 | 3.2.1 | Data set acquired |  | 5d | 2009-02-10 | 2009-02-16 |  | 2009-02-10 | 2009-02-16 | 5d | 90d | 0d | start no earlier than 2009-02-10 | MRC | 40h | 105 |
| 106 | 3.2.2 | Data set ready for delivery | milestone | 5d? | 2009-02-17 | 2009-02-23 | 105 | 2009-02-17 | 2009-02-23 | 5d? | 90d |  | finish no earlier than 2009-02-13 | MRC | 40h | 106 |
| 107 | 3.3 | **Priority 1: Constituency Boundaries** |  | 10d? | 2009-02-10 | 2009-02-23 |  | 2009-02-10 | 2009-02-23 | 10d? | 90d |  |  |  | 80h | 107 |
| 108 | 3.3.1 | Data set acquired |  | 5d | 2009-02-10 | 2009-02-16 |  | 2009-02-10 | 2009-02-16 | 5d | 90d | 0d | start no earlier than 2009-02-10 | MRC | 40h | 108 |
| 109 | 3.3.2 | Data set ready for delivery | milestone | 5d? | 2009-02-17 | 2009-02-23 | 108 | 2009-02-17 | 2009-02-23 | 5d? | 90d |  | start no earlier than 2009-02-09 | MRC | 40h | 109 |
| 110 | 3.4 | **Priority 1: Ward Boundaries** |  | 10d? | 2009-02-10 | 2009-02-23 |  | 2009-02-10 | 2009-02-23 | 10d? | 90d |  |  |  | 80h | 110 |
| 111 | 3.4.1 | Data set acquired |  | 5d | 2009-02-10 | 2009-02-16 |  | 2009-02-10 | 2009-02-16 | 5d | 90d | 0d | start no earlier than 2009-02-10 | MRC | 40h | 111 |
| 112 | 3.4.2 | Data set ready for delivery | milestone | 5d? | 2009-02-17 | 2009-02-23 | 111 | 2009-02-17 | 2009-02-23 | 5d? | 90d |  | finish no earlier than 2009-02-13 | MRC | 40h | 112 |
| 113 | 3.5 | **Priority 1: Village Points** |  | 10d? | 2009-02-10 | 2009-02-23 |  | 2009-02-10 | 2009-02-23 | 10d? | 90d |  |  |  | 80h | 113 |
| 114 | 3.5.1 | Data set acquired |  | 5d | 2009-02-10 | 2009-02-16 |  | 2009-02-10 | 2009-02-16 | 5d | 90d | 0d | start no earlier than 2009-02-10 | MRC | 40h | 114 |
| 115 | 3.5.2 | Data set ready for delivery | milestone | 5d? | 2009-02-17 | 2009-02-23 | 114 | 2009-02-17 | 2009-02-23 | 5d? | 90d |  | finish no earlier than 2009-02-20 | MRC | 40h | 115 |
| 116 | 3.6 | **Priority 1: Health Facility Points** |  | 9d? | 2009-02-10 | 2009-02-20 |  | 2009-02-10 | 2009-02-20 | 9d? | 91d |  |  |  | 72h | 116 |
| 117 | 3.6.1 | Data set acquired |  | 4d? | 2009-02-10 | 2009-02-13 |  | 2009-02-10 | 2009-02-13 | 4d? | 91d | 0d | start no earlier than 2009-02-10 | MRC | 32h | 117 |
| 118 | 3.6.2 | Data set ready for delivery | milestone | 5d? | 2009-02-16 | 2009-02-20 | 117 | 2009-02-16 | 2009-02-20 | 5d? | 91d |  | finish no earlier than 2009-02-20 | MRC | 40h | 118 |
| 119 | 3.7 | **Priority 1: Sentinel Site Points** |  | 9d? | 2009-02-10 | 2009-02-20 |  | 2009-02-10 | 2009-02-20 | 9d? | 91d |  |  |  | 72h | 119 |
| 120 | 3.7.1 | Data set acquired |  | 4d? | 2009-02-10 | 2009-02-13 |  | 2009-02-10 | 2009-02-13 | 4d? | 91d | 0d | start no earlier than 2009-02-10 | MRC | 32h | 120 |
| 121 | 3.7.2 | Data set ready for delivery | milestone | 5d? | 2009-02-16 | 2009-02-20 | 120 | 2009-02-16 | 2009-02-20 | 5d? | 91d |  | start no earlier than 2009-02-16 | MRC | 40h | 121 |
| 122 | 3.8 | **Priority 1: Window Trap Points** |  | 9d? | 2009-02-10 | 2009-02-20 |  | 2009-02-10 | 2009-02-20 | 9d? | 91d |  |  |  | 72h | 122 |
| 123 | 3.8.1 | Data set acquired |  | 4d? | 2009-02-10 | 2009-02-13 |  | 2009-02-10 | 2009-02-13 | 4d? | 91d | 0d | start no earlier than 2009-02-10 | MRC | 32h | 123 |
| 124 | 3.8.2 | Data set ready for delivery | milestone | 5d? | 2009-02-16 | 2009-02-20 | 123 | 2009-02-16 | 2009-02-20 | 5d? | 91d |  | finish no earlier than 2009-02-20 | MRC | 40h | 124 |
| 125 | 1.13 | Deliver Population data | milestone | 0h | 2009-02-24 | 2009-02-24 | 52 | 2009-02-24 | 2009-02-24 | 0h | 89d | 0d | start no earlier than 2009-02-18 | MRC |  | 125 |
| 126 | 1.14 | Import Geo data into MDSS schema |  | 8h | 2009-02-25 | 2009-02-25 | 125 | 2009-02-25 | 2009-02-25 | 8h | 89d |  |  |  | 24h | 126 |
| 127 | 1.15 | Deliver entomology data to be imported | milestone | 0h | 2009-02-20 | 2009-02-20 |  | 2009-02-20 | 2009-02-20 | 0h | 0d |  | must finish on 2009-02-20 | Mike |  | 127 |

| ID | WBS | Task | Type | Duration | Start | Finish | Predecessors | Baseline start | Baseline finish | Baseline duration | Total slack | Free slack | Constraint | Deadline | Resources | Work | Text4 | Text1 |
| --- | --- | --- | --- | --- | --- | --- | --- | --- | --- | --- | --- | --- | --- | --- | --- | --- | --- | --- |
| 128 | 1.16 | **Prototype Test Cases** |  | 2.86d? | 2009-02-11 | 2009-02-13 |  | 2009-02-11 | 2009-02-13 | 2.86d? | 1.86d |  |  |  |  | 16h | 128 |  |
| 129 | 1.16.1 | TC: Geo Tree |  | 1.43d? | 2009-02-11 | 2009-02-12 |  | 2009-02-11 | 2009-02-12 | 1.43d? | 1.86d | 0d | start no earlier than 2009-02-11 |  | Marlize [70%] | 8h | 129 | MDSS111 |
| 130 | 1.16.2 | TC: Searching for a geo entity |  | 11.43h | 2009-02-12 | 2009-02-13 | 129 | 2009-02-12 | 2009-02-13 | 11.43h | 1.86d | 0d |  |  | Marlize [70%] | 8h | 130 | MDSS101 |
| 131 | 1.17 | Create test cases for entomology prototype |  | 64h | 2009-02-11 | 2009-02-20 |  | 2009-02-11 | 2009-02-20 | 64h | 81.88d | 10d | start no earlier than 2009-02-11 |  | Mike [50%] | 32h | 131 |  |
| 132 | 1.18 | Test defect logging procedures |  | 0.71d? | 2009-02-24 | 2009-02-25 | 209 | 2009-02-24 | 2009-02-25 | 0.71d? | 1.86d | 0d |  |  | Marlize [70%] | 4h | 132 |  |
| 133 | 1.19 | Prepare entomology test data |  | 5.71h | 2009-02-27 | 2009-02-27 | 127, 134 | 2009-02-27 | 2009-02-27 | 5.71h | 78.52d | 6.64d |  |  | Marlize [70%] | 4h | 133 |  |
| 134 | 1.20 | Learn BIRT report writer |  | 11.43h | 2009-02-25 | 2009-02-27 | 132 | 2009-02-25 | 2009-02-27 | 11.43h | 1.86d | 0d |  |  | Marlize [70%] | 8h | 134 |  |
| 135 | 1.21 | **Test Prototype Submit Change Requests** |  | 13.57d? | 2009-03-02 | 2009-03-20 | 134 | 2009-03-02 | 2009-03-20 | 13.57d? | 0d |  |  |  |  | 125.02h | 135 |  |
| 136 | 1.21.1 | **Test: Geo entity search and maintanance** |  | 7.15d? | 2009-03-02 | 2009-03-12 |  | 2009-03-02 | 2009-03-12 | 7.15d? | 0d |  |  |  |  | 40.02h | 136 |  |
| 137 | 1.21.1.1 | Test: login to MDSS | milestone | 0h | 2009-03-02 | 2009-03-02 |  | 2009-03-02 | 2009-03-02 | 0h | 0d |  | must start on 2009-03-02 | 2009-02-03 | Marlize [70%] |  | 137 | MDSS107 |
| 138 | 1.21.1.2 | Test: Search for a geo entity - tree |  | 0.36d? | 2009-03-03 | 2009-03-03 |  | 2009-03-03 | 2009-03-03 | 0.36d? | 41.71d | 0d | start no earlier than 2009-03-03 |  | Marlize [70%] | 2h | 138 | MDSS111 |
| 139 | 1.21.1.3 | Submit defects: Search for a geo entity - tree |  | 0.71d? | 2009-03-03 | 2009-03-04 | 138 | 2009-03-03 | 2009-03-04 | 0.71d? | 41.71d | 0d |  |  | Marlize [70%] | 4h | 139 | MDSS111 |
| 140 | 1.21.1.4 | Test: create a geo entity |  | 2.86h | 2009-03-04 | 2009-03-04 | 139 | 2009-03-04 | 2009-03-04 | 2.86h | 41.71d | 0d |  |  | Marlize [70%] | 2h | 140 | MDSS101 |
| 141 | 1.21.1.5 | Submit defects: create a geo entity |  | 5.71h | 2009-03-04 | 2009-03-05 | 140 | 2009-03-04 | 2009-03-05 | 5.71h | 41.71d | 0d |  |  | Marlize [70%] | 4h | 141 | MDSS101 |
| 142 | 1.21.1.6 | Test: Search for a geo entity - filtered |  | 0.36d? | 2009-03-05 | 2009-03-05 | 141 | 2009-03-05 | 2009-03-05 | 0.36d? | 41.71d | 0d |  |  | Marlize [70%] | 2h | 142 | MDSS101 |
| 143 | 1.21.1.7 | Submit defects: Search for a geo entity - filtered |  | 0.36d | 2009-03-05 | 2009-03-05 | 142 | 2009-03-05 | 2009-03-05 | 0.36d | 41.71d | 0d |  |  | Marlize [70%] | 2.02h | 143 | MDSS101 |
| 144 | 1.21.1.8 | Test: Search for a geo entity - Hierarchy table |  | 1.43d? | 2009-03-05 | 2009-03-09 | 143 | 2009-03-05 | 2009-03-09 | 1.43d? | 41.71d | 0d |  |  | Marlize [70%] | 8h | 144 | MDSS101 |
| 145 | 1.21.1.9 | Submit defects: Search for a geo entity - Hierarchy table |  | 0.71d? | 2009-03-09 | 2009-03-10 | 144 | 2009-03-09 | 2009-03-10 | 0.71d? | 41.71d | 0d |  |  | Marlize [70%] | 4h | 145 | MDSS101 |
| 146 | 1.21.1.10 | Test: Search for a geo entity - combo boxes |  | 0.36d? | 2009-03-10 | 2009-03-10 | 145 | 2009-03-10 | 2009-03-10 | 0.36d? | 41.71d | 0d |  |  | Marlize [70%] | 2h | 146 | MDSS101 |
| 147 | 1.21.1.11 | Submit defects: Search for a geo entity - combo boxes |  | 0.36d? | 2009-03-10 | 2009-03-10 | 146 | 2009-03-10 | 2009-03-10 | 0.36d? | 41.71d | 0d |  |  | Marlize [70%] | 2h | 147 | MDSS101 |
| 148 | 1.21.1.12 | Test: Call 101 from 024, 016, 025 |  | 0.36d? | 2009-03-10 | 2009-03-11 | 147 | 2009-03-10 | 2009-03-11 | 0.36d? | 41.71d | 0d |  |  | Marlize [70%] | 2h | 148 | MDSS101 |
| 149 | 1.21.1.13 | Submit defects: Call 101 from 024, 016, 025 |  | 0.36d? | 2009-03-11 | 2009-03-11 | 148 | 2009-03-11 | 2009-03-11 | 0.36d? | 41.71d | 0d |  |  | Marlize [70%] | 2h | 149 | MDSS101 |
| 150 | 1.21.1.14 | Write change request MDSS101, MDSS111 |  | 0.71d? | 2009-03-11 | 2009-03-12 | 149 | 2009-03-11 | 2009-03-12 | 0.71d? | 41.71d | 0d |  |  | Marlize [70%] | 4h | 150 | MDSS101 |
| 151 | 1.21.2 | Test: changing visibility of fields in GUI |  | 1.43h | 2009-03-12 | 2009-03-12 | 150 | 2009-03-12 | 2009-03-12 | 1.43h | 41.71d | 0d |  |  | Marlize [70%] | 1h | 151 | MDSS117 |
| 152 | 1.21.3 | Submit defects: changing visibility of fields in GUI |  | 2.86h | 2009-03-12 | 2009-03-12 | 151 | 2009-03-12 | 2009-03-12 | 2.86h | 41.71d | 0d |  |  | Marlize [70%] | 2h | 152 | MDSS117 |
| 153 | 1.21.4 | Test: Submit a mosquito collection |  | 0.12d? | 2009-03-09 | 2009-03-09 | 131 | 2009-03-09 | 2009-03-09 | 0.12d? | 71.88d | 0d | start no earlier than 2009-03-09 |  | Mike | 1h | 153 | MDSS024 |
| 154 | 1.21.5 | Submit defects: Submit a mosquito collection |  | 2h | 2009-03-09 | 2009-03-09 | 153 | 2009-03-09 | 2009-03-09 | 2h | 71.88d | 0d |  |  | Mike | 2h | 154 | MDSS024 |
| 155 | 1.21.6 | Test: search/update/delete record |  | 1h | 2009-03-09 | 2009-03-09 | 154 | 2009-03-09 | 2009-03-09 | 1h | 71.88d | 0d |  |  | Mike | 1h | 155 | MDSS75 |
| 156 | 1.21.7 | Submit defects: search/update/delete |  | 2h | 2009-03-09 | 2009-03-09 | 155 | 2009-03-09 | 2009-03-09 | 2h | 71.88d | 0d |  |  | Mike | 2h | 156 |  |
| 157 | 1.21.8 | Test: Submit collection points |  | 1h | 2009-03-09 | 2009-03-09 | 156 | 2009-03-09 | 2009-03-09 | 1h | 71.88d | 0d |  |  | Mike | 1h | 157 | MDSS016 |
| 158 | 1.21.9 | Submit defects: Submit collection points |  | 1h | 2009-03-09 | 2009-03-09 | 157 | 2009-03-09 | 2009-03-09 | 1h | 71.88d | 0d |  |  | Mike | 1h | 158 | MDSS016 |
| 159 | 1.21.10 | Write change request: Collections |  | 4h | 2009-03-10 | 2009-03-10 | 158 | 2009-03-10 | 2009-03-10 | 4h | 71.88d | 0d |  |  | Mike | 4h | 159 | MDSS024 |
| 160 | 1.21.11 | Test: Import assay and collection data |  | 1h | 2009-03-10 | 2009-03-10 | 159, 133 | 2009-03-10 | 2009-03-10 | 1h | 71.88d | 0d |  |  | Mike | 1h | 160 | MDSS102 |
| 161 | 1.21.12 | Submit defects: generic import functionality |  | 2h | 2009-03-10 | 2009-03-10 | 160 | 2009-03-10 | 2009-03-10 | 2h | 71.88d | 0d |  |  | Mike | 2h | 161 | MDSS102 |
| 162 | 1.21.13 | Test:Species identification |  | 1h | 2009-03-10 | 2009-03-10 | 161 | 2009-03-10 | 2009-03-10 | 1h | 71.88d | 0d |  |  | Mike | 1h | 162 | MDSS012 |
| 163 | 1.21.14 | Submit defects: Species identification |  | 1h | 2009-03-11 | 2009-03-11 | 162 | 2009-03-11 | 2009-03-11 | 1h | 71.88d | 0d |  |  | Mike | 1h | 163 | MDSS012 |
| 164 | 1.21.15 | Test: Infectivity assay |  | 1h | 2009-03-11 | 2009-03-11 | 163 | 2009-03-11 | 2009-03-11 | 1h | 71.88d | 0d |  |  | Mike | 1h | 164 | MDSS022 |
| 165 | 1.21.16 | Submit defects: Infectivity assay |  | 1h | 2009-03-11 | 2009-03-11 | 164 | 2009-03-11 | 2009-03-11 | 1h | 71.88d | 0d |  |  | Mike | 1h | 165 | MDSS022 |
| 166 | 1.21.17 | Test: Molecular assay |  | 2h | 2009-03-11 | 2009-03-11 | 165 | 2009-03-11 | 2009-03-11 | 2h | 71.88d | 0d |  |  | Mike | 2h | 166 | MDSS010 |
| 167 | 1.21.18 | Submit defects: Molecular assay |  | 2h | 2009-03-11 | 2009-03-11 | 166 | 2009-03-11 | 2009-03-11 | 2h | 71.88d | 0d |  |  | Mike | 2h | 167 | MDSS010 |
| 168 | 1.21.19 | Test: Biochemical assay |  | 1h | 2009-03-11 | 2009-03-11 | 167 | 2009-03-11 | 2009-03-11 | 1h | 71.88d | 0d |  |  | Mike | 1h | 168 | MDSS011 |
| 169 | 1.21.20 | Submit defects: Biochemical assay |  | 1h | 2009-03-12 | 2009-03-12 | 168 | 2009-03-12 | 2009-03-12 | 1h | 71.88d | 0d |  |  | Mike | 1h | 169 | MDSS011 |
| 170 | 1.21.21 | Test: Biochemical cut-off values |  | 1h | 2009-03-12 | 2009-03-12 | 169 | 2009-03-12 | 2009-03-12 | 1h | 71.88d | 0d |  |  | Mike | 1h | 170 | MDSS014 |
| 171 | 1.21.22 | Submit defects: Biochemical cut-off values |  | 1h | 2009-03-12 | 2009-03-12 | 170 | 2009-03-12 | 2009-03-12 | 1h | 71.88d | 0d |  |  | Mike | 1h | 171 | MDSS014 |
| 172 | 1.21.23 | Write change request: Mechanisms |  | 4h | 2009-03-12 | 2009-03-12 | 171 | 2009-03-12 | 2009-03-12 | 4h | 71.88d | 0d |  |  | Mike | 4h | 172 |  |
| 173 | 1.21.24 | Test: Adult discriminating dose assay |  | 0.25d? | 2009-03-12 | 2009-03-13 | 172 | 2009-03-12 | 2009-03-13 | 0.25d? | 71.88d | 0d |  |  | Mike | 2h | 173 | MDSS004 |
| 174 | 1.21.25 | Submit defects: Adult discriminating dose assay |  | 2h | 2009-03-13 | 2009-03-13 | 173 | 2009-03-13 | 2009-03-13 | 2h | 71.88d | 0d |  |  | Mike | 2h | 174 | MDSS004 |
| 175 | 1.21.26 | Test: Larvae discriminating dose assay |  | 0.12d? | 2009-03-13 | 2009-03-13 | 174 | 2009-03-13 | 2009-03-13 | 0.12d? | 71.88d | 0d |  |  | Mike | 1h | 175 | MDSS008 |
| 176 | 1.21.27 | Submit defects: Larvae discriminating dose assay |  | 1h | 2009-03-13 | 2009-03-13 | 175 | 2009-03-13 | 2009-03-13 | 1h | 71.88d | 0d |  |  | Mike | 1h | 176 | MDSS008 |
| 177 | 1.21.28 | Test: Adult knock down assay |  | 0.12d? | 2009-03-13 | 2009-03-13 | 176 | 2009-03-13 | 2009-03-13 | 0.12d? | 71.88d | 0d |  |  | Mike | 1h | 177 | MDSS006 |
| 178 | 1.21.29 | Submit defects: Adult knock down assay |  | 1h | 2009-03-13 | 2009-03-13 | 177 | 2009-03-13 | 2009-03-13 | 1h | 71.88d | 0d |  |  | Mike | 1h | 178 | MDSS006 |
| 179 | 1.21.30 | Test: Resistance cut-off values |  | 1h | 2009-03-13 | 2009-03-13 | 178 | 2009-03-13 | 2009-03-13 | 1h | 71.88d | 0d |  |  | Mike | 1h | 179 | MDSS009 |
| 180 | 1.21.31 | Submit defects: Resistance cut-off values |  | 1h | 2009-03-16 | 2009-03-16 | 179 | 2009-03-16 | 2009-03-16 | 1h | 71.88d | 0d |  |  | Mike | 1h | 180 | MDSS009 |
| 181 | 1.21.32 | Write change request: resistance assays |  | 4h | 2009-03-16 | 2009-03-16 | 180 | 2009-03-16 | 2009-03-16 | 4h | 71.88d | 0d |  |  | Mike | 4h | 181 |  |
| 182 | 1.21.33 | Test: Efficacy assay |  | 0.12d? | 2009-03-16 | 2009-03-16 | 181 | 2009-03-16 | 2009-03-16 | 0.12d? | 71.88d | 0d |  |  | Mike | 1h | 182 | MDSS025 |
| 183 | 1.21.34 | Submit defects: Efficacy assay |  | 1h | 2009-03-16 | 2009-03-16 | 182 | 2009-03-16 | 2009-03-16 | 1h | 71.88d | 0d |  |  | Mike | 1h | 183 | MDSS025 |
| 184 | 1.21.35 | Write change request: Efficacy assay |  | 2h | 2009-03-16 | 2009-03-17 | 183 | 2009-03-16 | 2009-03-17 | 2h | 71.88d | 0d |  |  | Mike | 2h | 184 | MDSS025 |

| ID | WBS | Task | Duration | Start | Finish | Predecessors | Baseline start | Baseline finish | Baseline duration | Total slack | Free slack | Resources | Work | Text1 | Text4 |
| --- | --- | --- | --- | --- | --- | --- | --- | --- | --- | --- | --- | --- | --- | --- | --- |
| 185 | 1.21.36 | **Test: Entomology dynamic query and reports** | 5.89d | 2009-03-12 | 2009-03-20 | 152 | 2009-03-12 | 2009-03-20 | 5.89d | 72.43d |  |  | 33h | MDSS145 | 185 |
| 186 | 1.21.36.1 | Test: add Geo-entity fields | 1.43h | 2009-03-12 | 2009-03-12 |  | 2009-03-12 | 2009-03-12 | 1.43h | 72.43d | 0d | Marlize [70%] | 1h | MDSS145 | 186 |
| 187 | 1.21.36.2 | Test: add other fields | 1.43h | 2009-03-12 | 2009-03-13 | 186 | 2009-03-12 | 2009-03-13 | 1.43h | 72.43d | 0d | Marlize [70%] | 1h | MDSS145 | 187 |
| 188 | 1.21.36.3 | Test: add functions | 1.43h | 2009-03-13 | 2009-03-13 | 187 | 2009-03-13 | 2009-03-13 | 1.43h | 72.43d | 0d | Marlize [70%] | 1h | MDSS145 | 188 |
| 189 | 1.21.36.4 | Test: date ranges on collection date or assay date | 1.43h | 2009-03-13 | 2009-03-13 | 188 | 2009-03-13 | 2009-03-13 | 1.43h | 72.43d | 0d | Marlize [70%] | 1h | MDSS145 | 189 |
| 190 | 1.21.36.5 | Submit defects: Build query | 2.86h | 2009-03-13 | 2009-03-13 | 189 | 2009-03-13 | 2009-03-13 | 2.86h | 72.43d | 0d | Marlize [70%] | 2h | MDSS145 | 190 |
| 191 | 1.21.36.6 | Test: save query | 1.43h | 2009-03-13 | 2009-03-13 | 190 | 2009-03-13 | 2009-03-13 | 1.43h | 72.43d | 0d | Marlize [70%] | 1h | MDSS056 | 191 |
| 192 | 1.21.36.7 | Test: run a saved query | 1.43h | 2009-03-13 | 2009-03-16 | 191 | 2009-03-13 | 2009-03-16 | 1.43h | 72.43d | 0d | Marlize [70%] | 1h | MDSS056 | 192 |
| 193 | 1.21.36.8 | Test: modify a saved query | 1.43h | 2009-03-16 | 2009-03-16 | 192 | 2009-03-16 | 2009-03-16 | 1.43h | 72.43d | 0d | Marlize [70%] | 1h | MDSS056 | 193 |
| 194 | 1.21.36.9 | Test: export query results | 1.43h | 2009-03-16 | 2009-03-16 | 193 | 2009-03-16 | 2009-03-16 | 1.43h | 72.43d | 0d | Marlize [70%] | 1h | MDSS071 | 194 |
| 195 | 1.21.36.10 | Test: dump functionality | 1.43h | 2009-03-16 | 2009-03-16 | 194 | 2009-03-16 | 2009-03-16 | 1.43h | 72.43d | 0d | Marlize [70%] | 1h |  | 195 |
| 196 | 1.21.36.11 | Submit defects: deploy query | 2.86h | 2009-03-16 | 2009-03-17 | 195 | 2009-03-16 | 2009-03-17 | 2.86h | 72.43d | 0d | Marlize [70%] | 2h |  | 196 |
| 197 | 1.21.36.12 | Test: create thematic map from query | 11.43h | 2009-03-17 | 2009-03-18 | 196 | 2009-03-17 | 2009-03-18 | 11.43h | 72.43d | 0d | Marlize [70%] | 8h |  | 197 |
| 198 | 1.21.36.13 | Test: find query results in BIRT | 1.43h | 2009-03-18 | 2009-03-18 | 197 | 2009-03-18 | 2009-03-18 | 1.43h | 72.43d | 0d | Marlize [70%] | 1h | MDSS062 | 198 |
| 199 | 1.21.36.14 | Test: create a report template (table) | 2.86h | 2009-03-18 | 2009-03-18 | 198 | 2009-03-18 | 2009-03-18 | 2.86h | 72.43d | 0d | Marlize [70%] | 2h | MDSS062 | 199 |
| 200 | 1.21.36.15 | Test: Link a report template to query | 1.43h | 2009-03-18 | 2009-03-19 | 199 | 2009-03-18 | 2009-03-19 | 1.43h | 72.43d | 0d | Marlize [70%] | 1h | MDSS056 | 200 |
| 201 | 1.21.36.16 | Test: view/print/save a report | 1.43h | 2009-03-19 | 2009-03-19 | 200 | 2009-03-19 | 2009-03-19 | 1.43h | 72.43d | 0d | Marlize [70%] | 1h | MDSS062 | 201 |
| 202 | 1.21.36.17 | Test: change linked report | 1.43h | 2009-03-19 | 2009-03-19 | 201 | 2009-03-19 | 2009-03-19 | 1.43h | 72.43d | 0d | Marlize [70%] | 1h | MDSS062 | 202 |
| 203 | 1.21.36.18 | Submit defects: deploy query | 2.86h | 2009-03-19 | 2009-03-19 | 202 | 2009-03-19 | 2009-03-19 | 2.86h | 72.43d | 0d | Marlize [70%] | 2h |  | 203 |
| 204 | 1.21.36.19 | Write change request: Dynamic query | 5.71h | 2009-03-19 | 2009-03-20 | 203 | 2009-03-19 | 2009-03-20 | 5.71h | 72.43d |  | Marlize [70%] | 4h |  | 204 |
| 205 | 1.22 | **Finalise Query Use Cases** | 38.11d | 2009-02-13 | 2009-04-08 |  | 2009-02-13 | 2009-04-08 | 38.11d | 1.86d |  |  | 72h |  | 205 |
| 206 | 1.22.1 | UC: Aggregated Cases - query | 11.43h | 2009-02-13 | 2009-02-17 | 130 | 2009-02-13 | 2009-02-17 | 11.43h | 1.86d | 0d | Marlize [70%] | 8h | MDSS129 | 206 |
| 207 | 1.22.2 | UC: Indicator survey - query | 11.43h | 2009-02-17 | 2009-02-18 | 206 | 2009-02-17 | 2009-02-18 | 11.43h | 1.86d | 0d | Marlize [70%] | 8h | MDSS140 | 207 |
| 208 | 1.22.3 | UC: Individual Cases - query | 11.43h | 2009-02-18 | 2009-02-20 | 207 | 2009-02-18 | 2009-02-20 | 11.43h | 1.86d | 0d | Marlize [70%] | 8h | MDSS128 | 208 |
| 209 | 1.22.4 | UC: IRS - query | 22.86h | 2009-02-20 | 2009-02-24 | 208 | 2009-02-20 | 2009-02-24 | 22.86h | 1.86d | 0d | Marlize [70%] | 16h | MDSS132 | 209 |
| 210 | 1.22.5 | UC: ITN FacilityCommunity distribution - query | 11.43h | 2009-04-01 | 2009-04-02 | 340 | 2009-04-01 | 2009-04-02 | 11.43h | 41.71d | 0d | Marlize [70%] | 8h | MDSS135 | 210 |
| 211 | 1.22.6 | UC: ITN household use - query | 11.43h | 2009-04-02 | 2009-04-06 | 210 | 2009-04-02 | 2009-04-06 | 11.43h | 41.71d | 0d | Marlize [70%] | 8h | MDSS138 | 211 |
| 212 | 1.22.7 | UC: IPT individual - query | 11.43h | 2009-04-06 | 2009-04-07 | 211 | 2009-04-06 | 2009-04-07 | 11.43h | 41.71d | 0d | Marlize [70%] | 8h | MDSS130 | 212 |
| 213 | 1.22.8 | UC: IPT aggregated - query | 11.43h | 2009-04-07 | 2009-04-08 | 212 | 2009-04-07 | 2009-04-08 | 11.43h | 44.75d | 0d | Marlize [70%] | 8h | MDSS131 | 213 |

| ID | WBS | Task | Duration | Start | Finish | Predecessors | Baseline start | Baseline finish | Baseline duration | Total slack | Free slack | Constraint | Resources | Work | Cost | Baseline cost | Text4 | Text1 | Text2 |
| --- | --- | --- | --- | --- | --- | --- | --- | --- | --- | --- | --- | --- | --- | --- | --- | --- | --- | --- | --- |
| 214 | 1.23 | **Complete Development** | 63.76d? | 2009-03-02 | 2009-05-28 |  | 2009-03-02 | 2009-05-28 | 63.25d? | 23.24d |  |  |  | 1656h | 172,960 | 172,960 | 214 |  |  |
| 215 | 1.23.1 | **Generic Development** | 34.65d? | 2009-03-05 | 2009-04-22 |  | 2009-03-05 | 2009-04-14 | 28.76d? | 30d |  |  |  | 344h | 31,280 | 31,280 | 215 |  |  |
| 216 | 1.23.1.1 | Dev: Reconstruct saved query | 47.06h | 2009-03-20 | 2009-03-27 | 23 | 2009-03-12 | 2009-03-20 | 47.06h | 42.29d | 0d |  | Nathan [85%] | 40h | 4,600 | 4,600 | 216 | SYS06-4 |  |
| 217 | 1.23.1.2 | Dev: Overall site layout | 47.06h | 2009-03-27 | 2009-04-06 | 216 | 2009-03-20 | 2009-03-27 | 47.06h | 42.29d | 0d |  | Nathan [85%] | 40h | 4,600 | 4,600 | 217 | SYS05 |  |
| 218 | 1.23.1.3 | Dev: Configure system variables | 8h | 2009-03-23 | 2009-03-24 | 51 | 2009-03-23 | 2009-03-24 | 8h | 37d | 0d |  | Darrell | 8h | 920 | 920 | 218 | MDSS109 | 1 day |
| 219 | 1.23.1.4 | Dev: maintain catalogues | 28.23h | 2009-04-06 | 2009-04-10 | 217 | 2009-03-27 | 2009-04-02 | 28.23h | 42.29d | 0d |  | Nathan [85%] | 24h | 2,760 | 2,760 | 219 | MDSS103 |  |
| 220 | 1.23.1.5 | Dev: Epi week - set or change | 18.82h | 2009-03-13 | 2009-03-18 | 16 | 2009-03-09 | 2009-03-12 | 18.82h | 23.24d | 0d |  | Thomas (Oz) [85%] | 16h | 1,840 | 1,840 | 220 | MDSS119 | 2 days |
| 221 | 1.23.1.6 | Dev: define season start and end dates | 18.82h | 2009-03-18 | 2009-03-20 | 220 | 2009-03-12 | 2009-03-16 | 18.82h | 23.24d | 0d |  | Thomas (Oz) [85%] | 16h | 1,840 | 1,840 | 221 | MDSS127 | 2 days |
| 222 | 1.23.1.7 | Dev: enter/maintain people in the system | 18.82h | 2009-03-20 | 2009-03-25 | 221 | 2009-03-16 | 2009-03-19 | 18.82h | 23.24d | 0d |  | Thomas (Oz) [85%] | 16h | 1,840 | 1,840 | 222 | MDSS114 |  |
| 223 | 1.23.1.8 | Dev: create synonyms for imported Geo entities | 32h | 2009-03-13 | 2009-03-19 | 50 | 2009-03-13 | 2009-03-19 | 32h | 23.75d | 0d |  | Justin | 32h | 3,680 | 3,680 | 223 | MDSS112 |  |
| 224 | 1.23.1.9 | Dev: User Admin Screen for account management | 3d? | 2009-04-06 | 2009-04-08 | 15 | 2009-04-06 | 2009-04-08 | 3d? | 59d |  | start no earlier than 2009-04-06 | External TF1 | 24h |  |  | 224 |  | 3 days |
| 225 | 1.23.1.10 | Dev: user Admin Screen for Role assignment | 2.35d? | 2009-04-10 | 2009-04-14 | 219 | 2009-04-02 | 2009-04-06 | 2.35d? | 42.29d | 0d | start no earlier than 2009-03-06 | Nathan [85%] | 16h | 1,840 | 1,840 | 225 | MDSS142 | 2 days |
| 226 | 1.23.1.11 | Dev: Add localisable character attributes | 18.82h | 2009-04-14 | 2009-04-17 | 225 | 2009-04-06 | 2009-04-09 | 18.82h | 42.29d | 0d |  | Nathan [85%] | 16h | 1,840 | 1,840 | 226 | SYS01-1 |  |
| 227 | 1.23.1.12 | Dev: CRUD on localisable fields | 48h | 2009-03-05 | 2009-03-12 | 15 | 2009-03-05 | 2009-03-12 | 48h | 78d |  |  | External TF1 | 48h |  |  | 227 | SYS01-2 |  |
| 228 | 1.23.1.13 | Dev: CRUD screen for defining geography universals | 28.23h | 2009-04-17 | 2009-04-22 | 226 | 2009-04-09 | 2009-04-14 | 28.23h | 42.29d | 0d |  | Nathan [85%] | 24h | 2,760 | 2,760 | 228 | SYS07-3 |  |
| 229 | 1.23.1.14 | Change date/time format | 10h | 2009-03-31 | 2009-04-01 | 232 | 2009-03-31 | 2009-04-01 | 10h | 37d | 0d |  | Darrell [80%] | 8h | 920 | 920 | 229 | MDSS120 |  |
| 230 | 1.23.1.15 | Change geo root | 20h | 2009-04-01 | 2009-04-03 | 229 | 2009-04-01 | 2009-04-03 | 20h | 37d | 13.25d |  | Darrell [80%] | 16h | 1,840 | 1,840 | 230 | MDSS122 |  |
| 231 | 1.23.2 | **Indicator survey** | 8d | 2009-03-19 | 2009-03-31 |  | 2009-03-19 | 2009-03-31 | 8d | 23.75d |  |  |  | 72h | 8,280 | 8,280 | 231 |  |  |
| 232 | 1.23.2.1 | Dev: Indicator survey - CRUD | 40h | 2009-03-24 | 2009-03-31 | 218 | 2009-03-24 | 2009-03-31 | 40h | 37d | 0d |  | Darrell [80%] | 32h | 3,680 | 3,680 | 232 | MDSS026 |  |
| 233 | 1.23.2.2 | Dev - Indicator survey - dynamic query | 50h | 2009-03-19 | 2009-03-27 | 223, 207 | 2009-03-19 | 2009-03-27 | 50h | 23.75d | 0d |  | Justin [80%] | 40h | 4,600 | 4,600 | 233 | MDSS140 |  |
| 234 | 1.23.3 | **Case Surveilance** | 48.25d | 2009-03-02 | 2009-05-07 |  | 2009-03-02 | 2009-05-07 | 48.25d | 23.75d |  |  |  | 448h | 51,520 | 51,520 | 234 |  |  |
| 235 | 1.23.3.1 | Dev: aggregated cases - CRUD | 40h | 2009-03-02 | 2009-03-06 |  | 2009-03-02 | 2009-03-06 | 40h | 28d | 0d | start no earlier than 2009-03-01 | TBD | 40h | 4,600 | 4,600 | 235 | MDSS002 | 5 days |
| 236 | 1.23.3.2 | Dev: calculate CFR | 37.65h | 2009-03-25 | 2009-03-31 | 222 | 2009-03-19 | 2009-03-25 | 37.65h | 23.24d | 0d |  | Thomas (Oz) [85%] | 32h | 3,680 | 3,680 | 236 | MDSS087 | 4 days |
| 237 | 1.23.3.3 | Dev: aggregated cases - dynamic query | 40h | 2009-03-09 | 2009-03-13 | 235, 206 | 2009-03-09 | 2009-03-13 | 40h | 28d | 0d |  | TBD | 40h | 4,600 | 4,600 | 237 | MDSS129 | 5 days |
| 238 | 1.23.3.4 | Dev: Input or modify population data | 32h | 2009-03-16 | 2009-03-19 | 237 | 2009-03-16 | 2009-03-19 | 32h | 28d | 0d | start no earlier than 2009-02-01 | TBD | 32h | 3,680 | 3,680 | 238 | MDSS003 | 4 days |
| 239 | 1.23.3.5 | Dev: Import population or annual growth rate data | 40h | 2009-03-20 | 2009-03-26 | 238 | 2009-03-20 | 2009-03-26 | 40h | 28d | 0d |  | TBD | 40h | 4,600 | 4,600 | 239 | MDSS083 |  |
| 240 | 1.23.3.6 | Dev: input/modify outbreak thresholds | 32h | 2009-03-27 | 2009-04-01 | 239 | 2009-03-27 | 2009-04-01 | 32h | 28d | 0d |  | TBD | 32h | 3,680 | 3,680 | 240 | MDSS105 | 5 days |
| 241 | 1.23.3.7 | Dev :import outbreak thresholds | 32h | 2009-04-02 | 2009-04-07 | 240 | 2009-04-02 | 2009-04-07 | 32h | 28d | 0d |  | TBD | 32h | 3,680 | 3,680 | 241 | MDSS085 | 5 days |
| 242 | 1.23.3.8 | Dev: Calculate annual or seasonal population | 50h | 2009-04-29 | 2009-05-07 | 270 | 2009-04-29 | 2009-05-07 | 50h | 23.75d | 0d |  | Darrell [80%] | 40h | 4,600 | 4,600 | 242 | MDSS073 | 5 days |
| 243 | 1.23.3.9 | Dev: calculate incidence | 47.06h | 2009-03-31 | 2009-04-08 | 236 | 2009-03-25 | 2009-04-02 | 47.06h | 23.24d | 0d |  | Thomas (Oz) [85%] | 40h | 4,600 | 4,600 | 243 | MDSS086 | 5 days |
| 244 | 1.23.3.10 | Dev: individual cases - CRUD | 40h | 2009-04-08 | 2009-04-14 | 241 | 2009-04-08 | 2009-04-14 | 40h | 28d | 0d |  | TBD | 40h | 4,600 | 4,600 | 244 | MDSS001 | 5 days |
| 245 | 1.23.3.11 | Dev: Outbreak notification | 47.06h | 2009-04-08 | 2009-04-16 | 243 | 2009-04-02 | 2009-04-10 | 47.06h | 23.24d | 0d |  | Thomas (Oz) [85%] | 40h | 4,600 | 4,600 | 245 | MDSS124 | 5 days |
| 246 | 1.23.3.12 | Dev: individual case - dynamic query | 40h | 2009-04-15 | 2009-04-21 | 244, 208 | 2009-04-15 | 2009-04-21 | 40h | 28d | 0d |  | TBD | 40h | 4,600 | 4,600 | 246 | MDSS128 | 5 days |

| ID | WBS | Task | Duration | Start | Finish | Predecessors | Baseline start | Baseline finish | Baseline duration | Total slack | Free slack | Constraint | Resources | Work | Cost | Baseline cost | Text4 | Text1 | Text2 | Text3 |
| --- | --- | --- | --- | --- | --- | --- | --- | --- | --- | --- | --- | --- | --- | --- | --- | --- | --- | --- | --- | --- |
| 247 | 1.23.4 | **Intervention monitoring** | 44.26d | 2009-03-27 | 2009-05-28 |  | 2009-03-27 | 2009-05-28 | 43.75d | 23.24d |  |  |  | 736h | 75,440 | 75,440 | 247 |  |  |  |
| 248 | 1.23.4.1 | **IRS** | 38.75d | 2009-03-27 | 2009-05-21 |  | 2009-03-27 | 2009-05-21 | 38.75d | 23.75d |  |  |  | 248h | 28,520 | 28,520 | 248 |  |  |  |
| 249 | 1.23.4.1.1 | Dev: enter/maintain spray team member | 32h | 2009-04-22 | 2009-04-27 | 235, 246 | 2009-04-22 | 2009-04-27 | 32h | 28d | 0d |  | TBD | 32h | 3,680 | 3,680 | 249 | MDSS113 |  |  |
| 250 | 1.23.4.1.2 | Dev: enter/maintain IRS teams | 32h | 2009-04-28 | 2009-05-01 | 249 | 2009-04-28 | 2009-05-01 | 32h | 28d | 0d |  | TBD | 32h | 3,680 | 3,680 | 250 | MDSS141 |  |  |
| 251 | 1.23.4.1.3 | Dev: BE - input or modify IRS targets | 30h | 2009-03-27 | 2009-04-02 | 233 | 2009-03-27 | 2009-04-02 | 30h | 23.75d | 0d |  | Justin [80%] | 24h | 2,760 | 2,760 | 251 | MDSS028 |  |  |
| 252 | 1.23.4.1.4 | Dev: GUI - input or modify IRS targets | 30h | 2009-05-07 | 2009-05-12 | 242, 251 | 2009-05-07 | 2009-05-12 | 30h | 23.75d | 0d |  | Darrell [80%] | 24h | 2,760 | 2,760 | 252 | MDSS028 |  |  |
| 253 | 1.23.4.1.5 | Dev: Configure items relating to application rate | 50h | 2009-04-02 | 2009-04-10 | 251 | 2009-04-02 | 2009-04-10 | 50h | 23.75d | 0d |  | Justin [80%] | 40h | 4,600 | 4,600 | 253 | MDSS106 |  |  |
| 254 | 1.23.4.1.6 | Dev: Configure items relating to application rate | 20h | 2009-05-13 | 2009-05-15 | 252, 253 | 2009-05-13 | 2009-05-15 | 20h | 23.75d | 0d |  | Darrell [80%] | 16h | 1,840 | 1,840 | 254 | MDSS106 |  |  |
| 255 | 1.23.4.1.7 | Dev: IRS - CRUD | 28.23h | 2009-04-22 | 2009-04-28 | 228 | 2009-04-14 | 2009-04-20 | 28.23h | 42.29d | 0d |  | Nathan [85%] | 24h | 2,760 | 2,760 | 255 | MDSS027 |  |  |
| 256 | 1.23.4.1.8 | Dev: IRS - CRUD | 30h | 2009-05-15 | 2009-05-21 | 254 | 2009-05-15 | 2009-05-21 | 30h | 23.75d | 0d |  | Darrell [80%] | 24h | 2,760 | 2,760 | 256 | MDSS027 |  |  |
| 257 | 1.23.4.1.9 | Dev: IRS - dynamic query | 40h | 2009-04-10 | 2009-04-17 | 253, 209 | 2009-04-10 | 2009-04-17 | 40h | 23.75d | 0d | start no earlier than 2009-03-16 | Justin [80%] | 32h | 3,680 | 3,680 | 257 | MDSS132 |  |  |
| 258 | 1.23.4.2 | **Larvaciding** | 4.71d | 2009-04-16 | 2009-04-23 |  | 2009-04-10 | 2009-04-17 | 4.71d | 23.24d |  |  |  | 32h | 3,680 | 3,680 | 258 |  |  |  |
| 259 | 1.23.4.2.1 | Dev: larviciding - CRUD | 37.65h | 2009-04-16 | 2009-04-23 | 245 | 2009-04-10 | 2009-04-17 | 37.65h | 23.24d | 0d |  | Thomas (Oz) [85%] | 32h | 3,680 | 3,680 | 259 | MDSS031 | 8 days |  |
| 260 | 1.23.4.3 | **ITN** | 25.53d | 2009-04-23 | 2009-05-28 |  | 2009-04-17 | 2009-05-22 | 25.53d | 23.24d |  |  |  | 280h | 23,000 | 23,000 | 260 |  |  |  |
| 261 | 1.23.4.3.1 | Dev: ITN aggregated data - CRUD | 47.06h | 2009-04-23 | 2009-05-01 | 259 | 2009-04-17 | 2009-04-27 | 47.06h | 23.24d | 0d |  | Thomas (Oz) [85%] | 40h | 4,600 | 4,600 | 261 | MDSS080 | 5 days |  |
| 262 | 1.23.4.3.2 | Dev: ITN aggregated data - query | 8h | 2009-05-01 | 2009-05-04 | 261 | 2009-04-27 | 2009-04-28 | 8h | 23.24d | 0d |  |  | 40h |  |  | 262 | MDSS136 |  |  |
| 263 | 1.23.4.3.3 | Dev: ITN facility distribution - CRUD | 56.47h | 2009-05-04 | 2009-05-13 | 262 | 2009-04-28 | 2009-05-07 | 56.47h | 23.24d | 0d |  | Thomas (Oz) [85%] | 48h | 5,520 | 5,520 | 263 | MDSS030 | 5 days |  |
| 264 | 1.23.4.3.4 | Dev: ITN community distribution - CRUD | 37.65h | 2009-05-13 | 2009-05-19 | 263 | 2009-05-07 | 2009-05-13 | 37.65h | 23.24d | 0d |  | Thomas (Oz) [85%] | 32h | 3,680 | 3,680 | 264 | MDSS079 | 5 days |  |
| 265 | 1.23.4.3.5 | Dev: ITN by facility/community - query | 8h | 2009-05-19 | 2009-05-20 | 264, 210 | 2009-05-13 | 2009-05-14 | 8h | 23.24d | 0d |  |  | 40h |  |  | 265 | MDSS135 |  |  |
| 266 | 1.23.4.3.6 | Dev: ITN by household - CRUD | 47.06h | 2009-05-20 | 2009-05-28 | 264, 265 | 2009-05-14 | 2009-05-22 | 47.06h | 23.24d |  | start no earlier than 2009-03-21 | Thomas (Oz) [85%] | 40h | 4,600 | 4,600 | 266 | MDSS082 | 5 days | 10 |
| 267 | 1.23.4.3.7 | Dev: ITN by household - query | 40h | 2009-05-04 | 2009-05-08 | 250, 211 | 2009-05-04 | 2009-05-08 | 40h | 28d | 0d | start no earlier than 2009-04-10 | TBD | 40h | 4,600 | 4,600 | 267 | MDSS138 |  | 10 |
| 268 | 1.23.4.4 | **Intervention Planning** | 7.5d | 2009-04-17 | 2009-04-28 |  | 2009-04-17 | 2009-04-28 | 7.5d | 23.75d |  |  |  | 48h | 5,520 | 5,520 | 268 |  |  |  |
| 269 | 1.23.4.4.1 | Dev: BE - Intervention planning | 30h | 2009-04-17 | 2009-04-23 | 257 | 2009-04-17 | 2009-04-23 | 30h | 23.75d | 0d |  | Justin [80%] | 24h | 2,760 | 2,760 | 269 | MDSS077 |  |  |
| 270 | 1.23.4.4.2 | Dev: GUI - Intervention planning | 30h | 2009-04-23 | 2009-04-28 | 269, 230 | 2009-04-23 | 2009-04-28 | 30h | 23.75d | 0d |  | Darrell [80%] | 24h | 2,760 | 2,760 | 270 | MDSS077 |  |  |

| ID | WBS | Task | Type | Duration | Start | Finish | Predecessors | Complete | Baseline start | Baseline finish | Baseline duration | Total slack | Free slack | Constraint | Resources | Work | Cost | Baseline cost | Text4 | Text1 | Text3 | Text2 |
| --- | --- | --- | --- | --- | --- | --- | --- | --- | --- | --- | --- | --- | --- | --- | --- | --- | --- | --- | --- | --- | --- | --- |
| 271 | 1.23.4.5 | **IPT** |  | 25d | 2009-04-23 | 2009-05-28 |  |  | 2009-04-23 | 2009-05-28 | 25d | 23.75d |  |  |  | 128h | 14,720 | 14,720 | 271 |  |  |  |
| 272 | 1.23.4.5.1 | Dev: IPT aggregated - CRUD |  | 20h | 2009-04-23 | 2009-04-27 | 269 |  | 2009-04-23 | 2009-04-27 | 20h | 27.5d | 0d |  | Justin [80%] | 16h | 1,840 | 1,840 | 272 | MDSS069 |  |  |
| 273 | 1.23.4.5.2 | Dev: IPT aggregated - CRUD |  | 20h | 2009-05-21 | 2009-05-25 | 272, 256 |  | 2009-05-21 | 2009-05-25 | 20h | 23.75d | 0d |  | Darrell [80%] | 16h | 1,840 | 1,840 | 273 | MDSS069 |  |  |
| 274 | 1.23.4.5.3 | Dev: IPT aggregated - query |  | 40h | 2009-04-27 | 2009-05-04 | 212, 272 |  | 2009-04-27 | 2009-05-04 | 40h | 27.5d | 0d |  | Justin [80%] | 32h | 3,680 | 3,680 | 274 | MDSS131 |  |  |
| 275 | 1.23.4.5.4 | Dev: BE - IPT individual - CRUD |  | 20h | 2009-05-04 | 2009-05-07 | 274 |  | 2009-05-04 | 2009-05-07 | 20h | 27.5d | 0d |  | Justin [80%] | 16h | 1,840 | 1,840 | 275 | MDSS081 | 10 |  |
| 276 | 1.23.4.5.5 | Dev: GUI - IPT individual - CRUD |  | 20h | 2009-05-25 | 2009-05-28 | 273 |  | 2009-05-25 | 2009-05-28 | 20h | 23.75d |  |  | Darrell [80%] | 16h | 1,840 | 1,840 | 276 | MDSS081 | 10 |  |
| 277 | 1.23.4.5.6 | Dev: IPT individual - query |  | 40h | 2009-05-07 | 2009-05-14 | 213, 275 |  | 2009-05-07 | 2009-05-14 | 40h | 27.5d | 0d |  | Justin [80%] | 32h | 3,680 | 3,680 | 277 | MDSS130 | 10 |  |
| 278 | 1.23.5 | Dev: BE - Stock Control |  | 28.23h | 2009-04-28 | 2009-05-01 | 255 |  | 2009-04-20 | 2009-04-23 | 28.23h | 42.29d |  |  | Nathan [85%] | 24h | 2,760 | 2,760 | 278 | MDSS032 |  |  |
| 279 | 1.23.6 | Dev: GUI - Stock Control |  | 32h | 2009-05-11 | 2009-05-14 | 267 |  | 2009-05-11 | 2009-05-14 | 32h | 28d | 0d |  | TBD | 32h | 3,680 | 3,680 | 279 | MDSS032 |  |  |
| 280 | 2 | Dev: Backup the data and configuration file |  | 40h | 2009-05-15 | 2009-05-21 | 279 |  | 2009-05-15 | 2009-05-21 | 40h | 28d |  |  | TBD | 40h | 4,600 | 4,600 | 280 | MDSS065 |  |  |
| 281 | 3 | Dev: Select the user language | milestone | 0h | 2009-02-02 A | 2009-02-02 A |  | 100% | 2009-02-02 | 2009-02-02 | 0h |  |  |  |  |  |  |  | 281 | MDSS118 |  |  |
| 282 | 4 | Dev: Change date/time format |  | 10h | 2009-05-14 | 2009-05-15 | 277 |  | 2009-05-14 | 2009-05-15 | 10h | 27.5d | 0d |  | Justin [80%] | 8h | 920 | 920 | 282 | MDSS120 |  |  |
| 283 | 5 | **Complete Test Cases** |  | 35.25d? | 2009-02-11 | 2009-04-01 |  |  | 2009-02-11 | 2009-04-01 | 35.25d? | 63.39d |  |  |  | 204h |  |  | 283 |  |  |  |
| 284 | 5.1 | **Entomology** |  | 4d? | 2009-03-17 | 2009-03-23 |  |  | 2009-03-17 | 2009-03-23 | 4d? | 71.88d |  |  |  | 16h |  |  | 284 |  |  |  |
| 285 | 5.1.1 | TC: Biochemical cut-off values |  | 1d? | 2009-03-17 | 2009-03-18 | 184 |  | 2009-03-17 | 2009-03-18 | 1d? | 71.88d | 0d |  | Mike [50%] | 4h |  |  | 285 | MDSS014 |  |  |
| 286 | 5.1.2 | TC: Adult knock down assay |  | 1d? | 2009-03-18 | 2009-03-19 | 285 |  | 2009-03-18 | 2009-03-19 | 1d? | 71.88d | 0d |  | Mike [50%] | 4h |  |  | 286 | MDSS006 |  |  |
| 287 | 5.1.3 | TC: Larvae discriminating dose assay |  | 1d? | 2009-03-19 | 2009-03-20 | 286 |  | 2009-03-19 | 2009-03-20 | 1d? | 71.88d | 0d |  | Mike [50%] | 4h |  |  | 287 | MDSS008 | 10 |  |
| 288 | 5.1.4 | TC: Efficacy assay |  | 1d? | 2009-03-20 | 2009-03-23 | 287 |  | 2009-03-20 | 2009-03-23 | 1d? | 71.88d |  |  | Mike [50%] | 4h |  |  | 288 | MDSS025 |  |  |
| 289 | 5.2 | **System** |  | 11.25d | 2009-02-11 | 2009-02-26 |  |  | 2009-02-11 | 2009-02-26 | 11.25d | 83.75d |  |  |  | 60h |  |  | 289 |  |  |  |
| 290 | 5.2.1 | TC: Configure system variables |  | 10h | 2009-02-12 | 2009-02-13 | 306 |  | 2009-02-12 | 2009-02-13 | 10h | 82.5d | 0d | start no earlier than 2009-02-11 | Sanika [40%] | 4h |  |  | 290 | MDSS109 |  | 1 day |
| 291 | 5.2.2 | TC: maintain catalogues |  | 10h | 2009-02-13 | 2009-02-16 | 290 |  | 2009-02-13 | 2009-02-16 | 10h | 82.5d | 0d |  | Sanika [40%] | 4h |  |  | 291 | MDSS103 |  |  |
| 292 | 5.2.3 | TC: Epi week - set or change |  | 10h | 2009-02-16 | 2009-02-17 | 291 |  | 2009-02-16 | 2009-02-17 | 10h | 82.5d | 0d |  | Sanika [40%] | 4h |  |  | 292 | MDSS119 |  | 2 days |
| 293 | 5.2.4 | TC: define season start and end dates |  | 10h | 2009-02-18 | 2009-02-19 | 292 |  | 2009-02-18 | 2009-02-19 | 10h | 82.5d | 0d |  | Sanika [40%] | 4h |  |  | 293 | MDSS127 |  | 2 days |
| 294 | 5.2.5 | TC: enter/maintain people in the system |  | 10h | 2009-02-19 | 2009-02-20 | 293 |  | 2009-02-19 | 2009-02-20 | 10h | 82.5d | 0d |  | Sanika [40%] | 4h |  |  | 294 | MDSS114 |  |  |
| 295 | 5.2.6 | TC: create synonyms for imported Geo entities |  | 10h | 2009-02-20 | 2009-02-23 | 294 |  | 2009-02-20 | 2009-02-23 | 10h | 82.5d | 0d |  | Sanika [40%] | 4h |  |  | 295 | MDSS112 |  |  |
| 296 | 5.2.7 | TC: User Admin Screen for account management |  | 10h | 2009-02-11 | 2009-02-12 |  |  | 2009-02-11 | 2009-02-12 | 10h | 88.75d | 0d | start no earlier than 2009-02-11 | Saul [40%] | 4h |  |  | 296 | MDSS142 |  | 3 days |
| 297 | 5.2.8 | TC: user Admin Screen for Role assignment |  | 10h | 2009-02-12 | 2009-02-13 | 296 |  | 2009-02-12 | 2009-02-13 | 10h | 88.75d | 0d | start no earlier than 2009-02-01 | Saul [40%] | 4h |  |  | 297 | MDSS144 |  | 2 days |
| 298 | 5.2.9 | TC: Add localisable character attributes |  | 10h | 2009-02-13 | 2009-02-16 | 297 |  | 2009-02-13 | 2009-02-16 | 10h | 88.75d | 0d |  | Saul [40%] | 4h |  |  | 298 | SYS01-1 |  |  |
| 299 | 5.2.10 | TC: CRUD on localisable fields |  | 10h | 2009-02-16 | 2009-02-17 | 298 |  | 2009-02-16 | 2009-02-17 | 10h | 88.75d | 0d |  | Saul [40%] | 4h |  |  | 299 | SYS01-2 |  |  |
| 300 | 5.2.11 | TC: CRUD screen for defining geography universals |  | 10h | 2009-02-18 | 2009-02-19 | 299 |  | 2009-02-18 | 2009-02-19 | 10h | 88.75d | 0d |  | Saul [40%] | 4h |  |  | 300 | SYS07-3 |  |  |
| 301 | 5.2.12 | TC: Change date/time format |  | 10h | 2009-02-19 | 2009-02-20 | 300 |  | 2009-02-19 | 2009-02-20 | 10h | 88.75d | 0d |  | Saul [40%] | 4h |  |  | 301 | MDSS120 |  |  |
| 302 | 5.2.13 | TC: Change geo root |  | 10h | 2009-02-20 | 2009-02-23 | 301 |  | 2009-02-20 | 2009-02-23 | 10h | 88.75d | 0d |  | Saul [40%] | 4h |  |  | 302 | MDSS122 |  |  |
| 303 | 5.2.14 | TC: Select the user language |  | 10h | 2009-02-23 | 2009-02-24 | 302 |  | 2009-02-23 | 2009-02-24 | 10h | 88.75d | 0d |  | Saul [40%] | 4h |  |  | 303 | MDSS118 |  |  |
| 304 | 5.2.15 | TC: Change date/time format |  | 10h | 2009-02-25 | 2009-02-26 | 303 |  | 2009-02-25 | 2009-02-26 | 10h | 88.75d |  |  | Saul [40%] | 4h |  |  | 304 | MDSS120 |  |  |

| ID | WBS | Task | Duration | Start | Finish | Predecessors | Baseline start | Baseline finish | Baseline duration | Total slack | Free slack | Constraint | Resources | Work | Text4 | Text1 | Text2 |
| --- | --- | --- | --- | --- | --- | --- | --- | --- | --- | --- | --- | --- | --- | --- | --- | --- | --- |
| 305 | 5.3 | **Indicator Survey** | 6.96d | 2009-02-11 | 2009-02-19 |  | 2009-02-11 | 2009-02-12 | 1.25d | 82.5d |  |  |  | 8h | 305 |  |  |
| 306 | 5.3.1 | TC: Indicator survey - CRUD | 10h | 2009-02-11 | 2009-02-12 |  | 2009-02-11 | 2009-02-12 | 10h | 82.5d | 0d | start no earlier than 2009-02-11 | Sanika [40%] | 4h | 306 | MDSS026 |  |
| 307 | 5.3.2 | TC:Indicator survey query | 10h | 2009-02-18 | 2009-02-19 | 207 |  |  |  | 93.04d |  |  | Sanika [40%] | 4h | 307 | MDSS140 |  |
| 308 | 5.4 | **Case Surveilance** | 68.58h | 2009-03-12 | 2009-03-25 |  | 2009-03-12 | 2009-03-25 | 68.58h | 41.71d |  |  |  | 48h | 308 |  |  |
| 309 | 5.4.1 | TC: aggregated cases - CRUD | 5.71h | 2009-03-12 | 2009-03-13 | 152 | 2009-03-12 | 2009-03-13 | 5.71h | 41.71d | 0d | start no earlier than 2009-02-01 | Marlize [70%] | 4h | 309 | MDSS002 | 5 days |
| 310 | 5.4.2 | TC: calculate CFR | 5.71h | 2009-03-13 | 2009-03-16 | 309 | 2009-03-13 | 2009-03-16 | 5.71h | 41.71d | 0d |  | Marlize [70%] | 4h | 310 | MDSS087 | 4 days |
| 311 | 5.4.3 | TC: aggregated cases - dynamic query | 5.71h | 2009-03-16 | 2009-03-16 | 310 | 2009-03-16 | 2009-03-16 | 5.71h | 41.71d | 0d |  | Marlize [70%] | 4h | 311 | MDSS129 | 5 days |
| 312 | 5.4.4 | TC: Input or modify population data | 5.71h | 2009-03-16 | 2009-03-17 | 311 | 2009-03-16 | 2009-03-17 | 5.71h | 41.71d | 0d | start no earlier than 2009-02-01 | Marlize [70%] | 4h | 312 | MDSS003 | 4 days |
| 313 | 5.4.5 | TC: Import population or annual growth rate data | 5.71h | 2009-03-17 | 2009-03-18 | 312 | 2009-03-17 | 2009-03-18 | 5.71h | 41.71d | 0d |  | Marlize [70%] | 4h | 313 | MDSS083 |  |
| 314 | 5.4.6 | TC: input/modify outbreak thresholds | 5.71h | 2009-03-18 | 2009-03-18 | 313 | 2009-03-18 | 2009-03-18 | 5.71h | 41.71d | 0d |  | Marlize [70%] | 4h | 314 | MDSS105 | 5 days |
| 315 | 5.4.7 | TC :import outbreak thresholds | 5.71h | 2009-03-18 | 2009-03-19 | 314 | 2009-03-18 | 2009-03-19 | 5.71h | 41.71d | 0d |  | Marlize [70%] | 4h | 315 | MDSS085 | 5 days |
| 316 | 5.4.8 | TC: Calculate annual or seasonal population | 5.71h | 2009-03-19 | 2009-03-20 | 315 | 2009-03-19 | 2009-03-20 | 5.71h | 41.71d | 0d |  | Marlize [70%] | 4h | 316 | MDSS073 | 5 days |
| 317 | 5.4.9 | TC: calculate incidence | 5.71h | 2009-03-20 | 2009-03-23 | 316 | 2009-03-20 | 2009-03-23 | 5.71h | 41.71d | 0d |  | Marlize [70%] | 4h | 317 | MDSS086 | 5 days |
| 318 | 5.4.10 | TC: individual cases - CRUD | 5.71h | 2009-03-23 | 2009-03-23 | 317 | 2009-03-23 | 2009-03-23 | 5.71h | 41.71d | 0d |  | Marlize [70%] | 4h | 318 | MDSS001 | 5 days |
| 319 | 5.4.11 | TC: Outbreak notification | 5.71h | 2009-03-23 | 2009-03-24 | 318 | 2009-03-23 | 2009-03-24 | 5.71h | 41.71d | 0d |  | Marlize [70%] | 4h | 319 | MDSS124 | 5 days |
| 320 | 5.4.12 | TC: individual case - dynamic query | 5.71h | 2009-03-24 | 2009-03-25 | 319 | 2009-03-24 | 2009-03-25 | 5.71h | 41.71d | 0d |  | Marlize [70%] | 4h | 320 | MDSS128 | 5 days |
| 321 | 5.5 | **Intervention monitoring** | 282.04h | 2009-02-11 | 2009-04-01 |  | 2009-02-11 | 2009-04-01 | 282.04h | 64.75d |  |  |  | 72h | 321 |  |  |
| 322 | 5.5.1 | **IRS** | 34.29h | 2009-03-25 | 2009-03-31 |  | 2009-03-25 | 2009-03-31 | 34.29h | 41.71d |  |  |  | 24h | 322 |  |  |
| 323 | 5.5.1.1 | TC: enter/maintain spray team member | 5.71h | 2009-03-25 | 2009-03-25 | 320 | 2009-03-25 | 2009-03-25 | 5.71h | 41.71d | 0d |  | Marlize [70%] | 4h | 323 | MDSS113 |  |
| 324 | 5.5.1.2 | TC: enter/maintain IRS teams | 5.71h | 2009-03-25 | 2009-03-26 | 323 | 2009-03-25 | 2009-03-26 | 5.71h | 41.71d | 0d |  | Marlize [70%] | 4h | 324 | MDSS141 |  |
| 325 | 5.5.1.3 | TC: input or modify IRS targets | 5.71h | 2009-03-26 | 2009-03-27 | 324 | 2009-03-26 | 2009-03-27 | 5.71h | 41.71d | 0d |  | Marlize [70%] | 4h | 325 | MDSS028 |  |
| 326 | 5.5.1.4 | TC: Configure items relating to application rate | 5.71h | 2009-03-27 | 2009-03-30 | 325 | 2009-03-27 | 2009-03-30 | 5.71h | 41.71d | 0d |  | Marlize [70%] | 4h | 326 | MDSS106 |  |
| 327 | 5.5.1.5 | TC: IRS - CRUD | 5.71h | 2009-03-30 | 2009-03-30 | 326 | 2009-03-30 | 2009-03-30 | 5.71h | 41.71d | 0d |  | Marlize [70%] | 4h | 327 | MDSS027 |  |
| 328 | 5.5.1.6 | TC: IRS - dynamic query | 5.71h | 2009-03-30 | 2009-03-31 | 327 | 2009-03-30 | 2009-03-31 | 5.71h | 41.71d | 0d |  | Marlize [70%] | 4h | 328 | MDSS132 |  |

| ID | WBS | Task | Type | Duration | Start | Finish | Predecessors | Baseline start | Baseline finish | Baseline duration | Total slack | Free slack | Constraint | Resources | Work | Cost | Baseline cost | Text4 | Text1 | Text2 | Text3 |
| --- | --- | --- | --- | --- | --- | --- | --- | --- | --- | --- | --- | --- | --- | --- | --- | --- | --- | --- | --- | --- | --- |
| 329 | 5.5.2 | **Larvaciding** |  | 20h | 2009-02-11 | 2009-02-13 |  | 2009-02-11 | 2009-02-13 | 20h | 90d |  |  |  | 4h |  |  | 329 |  |  |  |
| 330 | 5.5.2.1 | TC: larviciding - CRUD |  | 20h | 2009-02-11 | 2009-02-13 |  | 2009-02-11 | 2009-02-13 | 20h | 90d | 0d | start no earlier than 2009-02-11 | Lars [20%] | 4h |  |  | 330 | MDSS031 | 8 days |  |
| 331 | 5.5.3 | **ITN** |  | 70h | 2009-02-23 | 2009-03-06 |  | 2009-02-23 | 2009-03-06 | 70h | 82.5d |  |  |  | 28h |  |  | 331 |  |  |  |
| 332 | 5.5.3.1 | TC: ITN aggregated data - CRUD |  | 10h | 2009-02-23 | 2009-02-24 | 295 | 2009-02-23 | 2009-02-24 | 10h | 82.5d | 0d |  | Sanika [40%] | 4h |  |  | 332 | MDSS080 | 5 days |  |
| 333 | 5.5.3.2 | TC: ITN aggregated data - query |  | 10h | 2009-02-25 | 2009-02-26 | 332 | 2009-02-25 | 2009-02-26 | 10h | 82.5d | 0d |  | Sanika [40%] | 4h |  |  | 333 | MDSS136 |  |  |
| 334 | 5.5.3.3 | TC: ITN facility distribution - CRUD |  | 10h | 2009-02-26 | 2009-02-27 | 333 | 2009-02-26 | 2009-02-27 | 10h | 82.5d | 0d |  | Sanika [40%] | 4h |  |  | 334 | MDSS030 | 5 days |  |
| 335 | 5.5.3.4 | TC: ITN community distribution - CRUD |  | 10h | 2009-02-27 | 2009-03-02 | 334 | 2009-02-27 | 2009-03-02 | 10h | 82.5d | 0d |  | Sanika [40%] | 4h |  |  | 335 | MDSS079 | 5 days |  |
| 336 | 5.5.3.5 | TC: ITN by facility/community - query |  | 10h | 2009-03-02 | 2009-03-03 | 335 | 2009-03-02 | 2009-03-03 | 10h | 82.5d | 0d |  | Sanika [40%] | 4h |  |  | 336 | MDSS135 |  |  |
| 337 | 5.5.3.6 | TC: ITN by household - CRUD |  | 10h | 2009-03-04 | 2009-03-05 | 336 | 2009-03-04 | 2009-03-05 | 10h | 82.5d | 0d | start no earlier than 2009-02-09 | Sanika [40%] | 4h |  |  | 337 | MDSS082 | 5 days | 10 |
| 338 | 5.5.3.7 | TC: ITN by household - query |  | 10h | 2009-03-05 | 2009-03-06 | 337 | 2009-03-05 | 2009-03-06 | 10h | 82.5d |  | start no earlier than 2009-02-09 | Sanika [40%] | 4h |  |  | 338 | MDSS138 |  | 10 |
| 339 | 5.5.4 | **Intervention Planning** |  | 5.71h | 2009-03-31 | 2009-04-01 |  | 2009-03-31 | 2009-04-01 | 5.71h | 41.71d |  |  |  | 4h |  |  | 339 |  |  |  |
| 340 | 5.5.4.1 | TC: Intervention planning |  | 5.71h | 2009-03-31 | 2009-04-01 | 328 | 2009-03-31 | 2009-04-01 | 5.71h | 41.71d | 0d |  | Marlize [70%] | 4h |  |  | 340 | MDSS077 |  |  |
| 341 | 5.5.5 | **IPT** |  | 40h | 2009-02-13 | 2009-02-20 |  | 2009-02-13 | 2009-02-20 | 40h | 90d |  |  |  | 8h |  |  | 341 |  |  |  |
| 342 | 5.5.5.1 | TC: IPT aggregated - CRUD |  | 20h | 2009-02-13 | 2009-02-17 | 330 | 2009-02-13 | 2009-02-17 | 20h | 90d | 0d |  | Lars [20%] | 4h |  |  | 342 | MDSS069 |  |  |
| 343 | 5.5.5.2 | TC: IPT individual - CRUD |  | 20h | 2009-02-18 | 2009-02-20 | 342 | 2009-02-18 | 2009-02-20 | 20h | 90d | 0d |  | Lars [20%] | 4h |  |  | 343 | MDSS081 |  | 10 |
| 344 | 5.5.6 | **Stock Control** |  | 20h | 2009-02-20 | 2009-02-24 |  | 2009-02-20 | 2009-02-24 | 20h | 90d |  |  |  | 4h |  |  | 344 |  |  |  |
| 345 | 5.5.6.1 | TC: Stock Control |  | 20h | 2009-02-20 | 2009-02-24 | 343 | 2009-02-20 | 2009-02-24 | 20h | 90d |  |  | Lars [20%] | 4h |  |  | 345 | MDSS032 |  |  |
| 346 | 6 | Create standard queries and reports |  | 114.28h | 2009-04-08 | 2009-04-29 | 213 | 2009-04-08 | 2009-04-29 | 114.28h | 44.75d |  |  | Marlize [70%] | 80h |  |  | 346 |  |  |  |
| 347 | 7 | Receive all historical entomological data | milestone | 8h | 2009-05-04 | 2009-05-04 |  | 2009-05-04 | 2009-05-04 | 8h | 40d | 0d | start no earlier than 2009-05-04 | MRC | 8h |  |  | 347 |  |  |  |
| 348 | 8 | Import historical entomological data |  | 8h | 2009-05-05 | 2009-05-05 | 347 | 2009-05-05 | 2009-05-05 | 8h | 40d |  |  |  |  |  |  | 348 |  |  |  |
| 349 | 9 | Receive all historical IRS data | milestone | 8h | 2009-05-04 | 2009-05-04 |  | 2009-05-04 | 2009-05-04 | 8h | 40d | 0d | start no earlier than 2009-05-04 |  |  |  |  | 349 |  |  |  |
| 350 | 10 | Import all historical IRS data |  | 8h | 2009-05-05 | 2009-05-05 | 349 | 2009-05-05 | 2009-05-05 | 8h | 40d |  |  |  |  |  |  | 350 |  |  |  |
| 351 | 11 | Order MDSS Hardware | milestone | 0h | 2009-02-02 | 2009-02-02 |  | 2009-02-02 | 2009-02-02 | 0h | 107d |  |  | Mike |  |  |  | 351 |  |  |  |
| 352 | 12 | Appoint MDSS Administrators | milestone | 0h | 2009-02-02 | 2009-02-02 |  | 2009-02-02 | 2009-02-02 | 0h | 107d |  |  | Mike |  |  |  | 352 |  |  |  |
| 353 | 13 | Complete system translation into Portuguese |  | 20d | 2009-04-06 | 2009-05-01 |  | 2009-04-06 | 2009-05-01 | 20d | 42d |  | start no earlier than 2009-04-06 | Mike [5%] | 8h |  |  | 353 |  |  |  |
| 354 | 14 | Dev: Installation (minimal or full) |  | 40h | 2009-05-15 | 2009-05-22 | 282 | 2009-05-15 | 2009-05-22 | 40h | 27.5d |  |  | Justin | 40h | 4,600 | 4,600 | 354 | SYS12 |  |  |
| 355 | 15 | Complete Test and Fix Cycle |  | 20d | 2009-05-18 | 2009-06-12 |  | 2009-05-18 | 2009-06-12 | 20d | 10d | 0d | start no earlier than 2009-05-18 |  |  |  |  | 355 |  |  |  |
| 356 | 16 | Implementation planning |  | 16h | 2009-06-15 | 2009-06-16 | 355 | 2009-06-15 | 2009-06-16 | 16h | 10d |  |  |  | 16h |  |  | 356 |  |  |  |
| 357 | 17 | Project Buffer |  | 10d | 2009-06-16 | 2009-06-29 |  | 2009-06-16 | 2009-06-29 | 10d | 0d |  | start no earlier than 2009-06-16 |  | 80h |  |  | 357 |  |  |  |
| 358 | 18 | Ready for Pilot Roll-Out | milestone | 8h | 2009-06-30 | 2009-06-30 | 357 | 2009-06-30 | 2009-06-30 | 8h | 0d |  |  |  |  |  |  | 358 |  |  |  |
